# Cronograma V2

How a schedule from MS Project changed from version to version. A marks actual dates.

## Version 1 (saved 2024-04-28, file Cronograma V2.mpp)

Note of the change: Integracion de archivo v2

| ID | WBS | Task | Duration | Start | Finish | Predecessors | Total float | Constraint |
| --- | --- | --- | --- | --- | --- | --- | --- | --- |
| 1 |  | Desarrollo de software | 1d? | 2024-04-29 | 2024-04-29 |  | 0d |  |
| 2 | 2 | **1. Diseño de base de datos y configuracion de cloud.** | 3.75d | 2024-04-30 | 2024-05-03 | 1 | 0d |  |
| 3 |  | 1.1. DER final del modelo de base de datos | 20h | 2024-04-30 | 2024-05-02 | 1 | 1.25d |  |
| 4 |  | 1.2. Clusterización y configuración del CLOUD | 30h | 2024-04-30 | 2024-05-03 | 1 | 0d |  |
| 5 | 3 | **2. Diseño arquitectura back end** | 18.75d | 2024-05-03 | 2024-05-30 | 3 | 0d |  |
| 6 |  | 2.1. Arquitectura en microservicios planificada, arquitectura CLOUD y arquitectura de paquetes estratégica para satisfacer servicios | 150h | 2024-05-03 | 2024-05-30 | 3, 4 | 0d |  |
| 7 | 4 | **3. Diseño arquitectura front end** | 21.25d | 2024-05-30 | 2024-06-28 |  | 85.12d |  |
| 8 |  | 3.1. Arquitectura hexagonal evolutiva con integración de módulo de lectura archivo ADOBE.XD y mapeo a archivo de salida JSX. | 170h | 2024-05-30 | 2024-06-28 | 6 | 85.12d |  |
| 9 | 5 | **5. Módulo Login** | 9.5d | 2024-05-30 | 2024-06-12 |  | 0d |  |
| 10 | 5.1 | **5.1. ABM USUARIOS** | 0.38d | 2024-05-30 | 2024-05-30 |  | 0d |  |
| 11 |  | 5.1.1. Insertar usuarios | 3h | 2024-05-30 | 2024-05-30 | 6 | 0d |  |
| 12 |  | 5.1.2. Editar usuarios | 3h | 2024-05-30 | 2024-05-30 | 6 | 0d |  |
| 13 |  | 5.1.3. Borrar usuarios | 3h | 2024-05-30 | 2024-05-30 | 6 | 0d |  |
| 14 |  | 5.1.4. Obtener usuarios | 3h | 2024-05-30 | 2024-05-30 | 6 | 0d |  |
| 15 |  | 5.2. Servicio Login back end con seguridad JWT & comprobación de errores | 15h | 2024-05-30 | 2024-06-03 | 10 | 0d |  |
| 16 |  | 5.3. Integración de servicios front end en google, facebook, GOOGLE +, Slack e instagram. | 20h | 2024-06-03 | 2024-06-06 | 15 | 0d |  |
| 17 |  | 5.4. Vista completa front end con integración de back end | 30h | 2024-06-06 | 2024-06-11 | 15, 16 | 0d |  |
| 18 |  | 5.5. Testeo modulo completo | 8h | 2024-06-12 | 2024-06-12 | 17 | 0d |  |
| 19 | 6 | **6. Módulo Home** | 77d | 2024-04-29 | 2024-08-13 |  | 0d |  |
| 20 |  | 6.1. Concepto UX de diseño | 10h | 2024-04-29 | 2024-04-30 |  | 31.75d |  |
| 21 |  | 6.2. Servicios back end involucrando todas las funcionalidades del concepto de diseño. | 42h | 2024-06-13 | 2024-08-07 | 6, 18, 20 | 0d | start no earlier than 2024-04-19 |
| 22 |  | 6.3. Vista front end completa con integración back end. | 30h | 2024-08-07 | 2024-08-12 | 21 | 0d |  |
| 23 |  | 6.4. Testeo modulo completo | 8h | 2024-08-13 | 2024-08-13 | 22 | 0d |  |
| 24 | 7 | **7. Módulo Compras** | 85.75d | 2024-04-30 | 2024-08-27 |  | 36.88d |  |
| 25 |  | 7.1. Concepto UX de diseño | 10h | 2024-04-30 | 2024-05-01 | 20 | 103d |  |
| 26 | 7.2 | **7.2. Servicio back end de compras con las integraciones de método de pago:** | 3d | 2024-08-14 | 2024-08-16 |  | 0d |  |
| 27 |  | 7.2.1. Transferencia. | 12h | 2024-08-14 | 2024-08-15 | 23 | 0d |  |
| 28 |  | 7.2.2. Mercado pago | 12h | 2024-08-14 | 2024-08-15 | 23 | 0d |  |
| 29 |  | 7.2.3. Crypto | 16h | 2024-08-14 | 2024-08-15 | 23 | 1d |  |
| 30 |  | 7.2.4. Tarjeta de crédito | 12h | 2024-08-15 | 2024-08-16 | 23, 28 | 0d |  |
| 31 |  | 7.2.5. Tarjeta de débito. | 12h | 2024-08-15 | 2024-08-16 | 23, 27 | 0d |  |
| 32 |  | 7.3.Integración de prevención de fraude de tarjeta. | 16h | 2024-08-19 | 2024-08-20 | 30, 31 | 41.88d |  |
| 33 |  | 7.4. Vista front end completa con integración de back end | 40h | 2024-08-19 | 2024-08-23 | 26 | 0d |  |
| 34 |  | 7.5. Testeo modulo completo | 16h | 2024-08-26 | 2024-08-27 | 33 | 0d |  |
| 35 | 8 | **8. Módulo de Búsqueda y Filtrado** | 94.25d? | 2024-05-01 | 2024-09-10 |  | 30.62d |  |
| 36 |  | 8.1. Concepto UX de diseño | 10h | 2024-05-01 | 2024-05-02 | 25 | 103d |  |
| 37 |  | 8.2. Servicio back end de búsqueda y filtrado contemplando las 15 formas de filtros diferentes incluyendo filtros dinámicos y estáticos. | 30h | 2024-08-28 | 2024-09-02 | 34 | 0d |  |
| 38 |  | 8.3. Concepto UX de integración de Landing page de categorías. | 15h | 2024-05-02 | 2024-05-06 | 36 | 121.75d |  |
| 39 |  | 8.4. Vista front end completa con integración de back end. | 40h | 2024-09-02 | 2024-09-09 | 37 | 0d |  |
| 40 |  | 8.5. Testeo modulo completo | 1d? | 2024-09-09 | 2024-09-10 | 39 | 0d |  |
| 41 | 9 | **9. Módulo Back Office User.** | 98.62d | 2024-05-02 | 2024-09-18 |  | 5.62d |  |
| 42 |  | 9.1. Concepto UX diseño. | 10h | 2024-05-02 | 2024-05-03 | 36 | 103d |  |
| 43 |  | 9.2. Servicios de back end para la obtención de datos de ventas por usuario. | 12h | 2024-09-10 | 2024-09-12 | 40 | 0d |  |
| 44 |  | 9.3. Vista front end completa con integración de back end. | 25h | 2024-09-12 | 2024-09-17 | 43 | 0d |  |
| 45 |  | 9.4. Testeo modulo completo | 8h | 2024-09-17 | 2024-09-18 | 44 | 0d |  |
| 46 | 10 | **10. Back Office Admin** | 105.62d | 2024-05-06 | 2024-09-30 |  | 0d |  |
| 47 |  | 10.1. Concepto UX diseño. | 10h | 2024-05-06 | 2024-05-07 | 42 | 103d |  |
| 48 | 10.2 | **10.2. ABM VENTAS** | 0.5d | 2024-09-18 | 2024-09-18 |  | 0d |  |
| 49 |  | 10.2.1.Insertar venta. | 4h | 2024-09-18 | 2024-09-18 | 45 | 0d |  |
| 50 |  | 10.2.2. Borrar venta. | 4h | 2024-09-18 | 2024-09-18 | 45 | 0d |  |
| 51 |  | 10.2.3. Editar venta. | 4h | 2024-09-18 | 2024-09-18 | 45 | 0d |  |
| 52 |  | 10.2.4. Obtener venta. | 4h | 2024-09-18 | 2024-09-18 | 45 | 0d |  |
| 53 |  | 10.3. Servicios back end para la obtención y filtrado de ventas. | 20h | 2024-09-18 | 2024-09-23 | 48 | 0d |  |
| 54 |  | 10.4. Servicios back end para la obtención de estadísticas. | 12h | 2024-09-18 | 2024-09-20 | 48 | 1d |  |
| 55 |  | 10.5. Vista front end completa con integración de back end. | 30h | 2024-09-23 | 2024-09-27 | 53, 54 | 0d |  |
| 56 |  | 10.6. Testeo modulo completo | 12h | 2024-09-27 | 2024-09-30 | 55 | 0d |  |
| 57 | 11 | **11. Módulo Producto** | 111.62d | 2024-05-07 | 2024-10-09 |  | 0d |  |
| 58 |  | 11.1. Concepto UX diseño. | 10h | 2024-05-07 | 2024-05-08 | 47 | 103d |  |
| 59 |  | 11.2. Servicios back end para la obtención de datos del producto, cálculo de envio y cálculo de pagos. | 20h | 2024-09-30 | 2024-10-03 | 56 | 0d |  |
| 60 |  | 11.3. Vista front end completa con integración de back end & integración SEO. | 30h | 2024-10-03 | 2024-10-08 | 59 | 0d |  |
| 61 |  | 11.4. Testeo modulo completo | 8h | 2024-10-08 | 2024-10-09 | 60 | 0d |  |
| 62 | 12 | **12. Modulo Ofertas** | 116.12d | 2024-05-08 | 2024-10-17 |  | 0d |  |
| 63 |  | 12.1. Concepto UX diseño USER & BACK OFFICE | 10h | 2024-05-08 | 2024-05-09 | 58 | 103d |  |
| 64 | 12.2 | **12.2. ABM Ofertas** | 0.38d | 2024-10-09 | 2024-10-10 |  | 0d |  |
| 65 |  | 12.2.1. Insertar oferta. | 3h | 2024-10-09 | 2024-10-10 | 61 | 0d |  |
| 66 |  | 12.2.2. Editar oferta. | 3h | 2024-10-09 | 2024-10-10 | 61 | 0d |  |
| 67 |  | 12.2.3. Borrar oferta. | 3h | 2024-10-09 | 2024-10-10 | 61 | 0d |  |
| 68 |  | 12.2.4. Obtener oferta. | 3h | 2024-10-09 | 2024-10-10 | 61 | 0d |  |
| 69 |  | 12.3. Servicios back end para la obtención de productos de oferta. | 5h | 2024-10-10 | 2024-10-10 | 64 | 0d |  |
| 70 |  | 12.4. Vista front end completa en back office ADMIN con integración de back end. | 30h | 2024-10-10 | 2024-10-16 | 69 | 0d |  |

| ID | WBS | Task | Duration | Start | Finish | Predecessors | Total float |
| --- | --- | --- | --- | --- | --- | --- | --- |
| 71 |  | 12.5. Testeo modulo completo | 8h | 2024-10-16 | 2024-10-17 | 70 | 0d |
| 72 | 13 | **13. Módulo Ventas** | 0d? | 2024-04-27 | 2024-04-27 |  | 0d |
| 73 |  | 13.1. Concepto UX diseñO | 1d | 2024-04-27 | 2024-04-27 |  |  |
| 74 |  | 13.2. Servicios back end que están involucrados en todo el circuito lógico de compras, incluyendo los pagos con tarjeta y la prevención de fraude. | 1d | 2024-04-27 | 2024-04-27 |  |  |
| 75 |  | 13.3. Vista front end completa con integración de back end | 1d | 2024-04-27 | 2024-04-27 |  |  |
| 76 |  | 13.4. Testeo modulo completo | 1d? | 2024-04-27 | 2024-04-27 |  |  |
| 77 | 14 | **14. Módulo notificaciones** | 121.12d | 2024-05-09 | 2024-10-25 |  | 0d |
| 78 |  | 14.1. Concepto UX diseño USER & BACK OFFICE | 10h | 2024-05-09 | 2024-05-10 | 63 | 103d |
| 79 | 14.2 | **14.2. ABM NOTIFICACIONES** | 0.88d | 2024-10-17 | 2024-10-18 |  | 0d |
| 80 |  | 14.2.1. Insertar notificaciones. | 7h | 2024-10-17 | 2024-10-18 | 71 | 0d |
| 81 |  | 14.2.2. Editar notificaciones. | 4h | 2024-10-17 | 2024-10-18 | 71 | 0.38d |
| 82 |  | 14.2.3. Borrar notificaciones. | 4h | 2024-10-17 | 2024-10-18 | 71 | 0.38d |
| 83 |  | 14.2.4. Obtener notificaciones. | 4h | 2024-10-17 | 2024-10-18 | 71 | 0.38d |
| 84 |  | 14.3. Servicios back end para la inserción masiva de notificaciones. | 12h | 2024-10-18 | 2024-10-21 | 79 | 3.88d |
| 85 |  | 14.4. Servicios back end para la obtención de notificaciones del usuario. | 5h | 2024-10-18 | 2024-10-21 | 79 | 0d |
| 86 |  | 14.5. Vista front end dentro de back office admin completa con integración de back end. | 30h | 2024-10-21 | 2024-10-24 | 85, 56 | 0d |
| 87 |  | 14.6. Testeo modulo completo | 8h | 2024-10-24 | 2024-10-25 | 86 | 0d |
| 88 | 15 | **15. Módulo Mailing** | 78d | 2024-05-13 | 2024-08-28 |  | 41.88d |
| 89 |  | 15.1. Configuración de servidor de correos. | 10h | 2024-05-30 | 2024-05-31 | 6 | 90.75d |
| 90 |  | 15.2. Cumplimiento de políticas de seguridad y de contenido para el envio de correos sin entrar en black list. | 48h | 2024-08-21 | 2024-08-28 | 32 | 41.88d |
| 91 |  | 15.3. Diseño UX para cada prototipo de correo de Marketing. | 20h | 2024-05-13 | 2024-05-15 | 78 | 103d |
| 92 |  | 15.4. Diseño UX para cada correo por venta realizada, cambios de estado de venta, de pago y de envio. | 20h | 2024-05-15 | 2024-05-17 | 91 | 103d |
| 93 |  | 15.5. Servicios back end para la creación de correos por Carrito abandonado. | 20h | 2024-05-20 | 2024-05-22 | 92 | 103d |
| 94 |  | 15.6. Servicios back end para la creación de correos por descuentos. | 20h | 2024-05-31 | 2024-06-05 | 89 | 90.75d |
| 95 |  | 15.7. Servicios back end para la creación de correos por ofertas. | 20h | 2024-06-05 | 2024-06-07 | 94 | 90.75d |
| 96 |  | 15.8. Servicios back end para la creación de correos por noticias propias | 20h | 2024-06-07 | 2024-06-12 | 95, 93 | 90.75d |
| 97 |  | 15.9. Servicios back end con la integración de envío de correos por creación de venta o cambio de estado. | 20h | 2024-06-12 | 2024-06-14 | 96 | 90.75d |
| 98 |  | 15.10. Vista front dentro de back office admin completa con integración de back end | 35h | 2024-06-14 | 2024-06-21 | 97 | 90.75d |
| 99 | 16 | **4. Análisis de SEO** | 119.12d | 2024-04-29 | 2024-10-11 |  | 10.75d |
| 100 | 16.1 | **4.1. Análisis estructural de posicionamiento orgánico de las vistas.** | 119.12d | 2024-04-29 | 2024-10-11 |  | 10.75d |
| 101 |  | 4.1.1. Home. | 10h | 2024-08-14 | 2024-08-15 | 19 | 51.62d |
| 102 |  | 4.1.2. Producto. | 10h | 2024-10-09 | 2024-10-11 | 57 | 10.75d |
| 103 |  | 4.1.3. Búsqueda y filtrado. | 10h | 2024-09-10 | 2024-09-11 | 35 | 30.62d |
| 104 |  | 4.1.4. Landing page categorías. | 10h | 2024-09-12 | 2024-09-13 | 103 | 30.62d |
| 105 |  | 4.1.5. Landing page marcas. | 10h | 2024-04-29 | 2024-04-30 |  | 128.62d |

## Version 2 (saved 2024-04-28, file Cronograma V2.mpp)

Note of the change: Merge branch 'main' of https://github.com/alanmarengo/AdministracionDeProyectos

Last finish 2024-10-25 → 2024-10-24 (-1d). Complete tasks 0 → 1.

Added:

| ID | Task | Duration | Start | Finish |
| --- | --- | --- | --- | --- |
| 2 | **Sprint 1** | 43.75d | 2024-04-29 A | 2024-06-27 |
| 10 | **Sprint 2** | 86d | 2024-04-29 | 2024-08-26 |
| 37 | **Sprint 3** | 98.88d? | 2024-05-01 | 2024-09-17 |
| 49 | **Sprint 4** | 122.62d? | 2024-04-27 | 2024-10-16 |
| 81 | **Sprint 5** | 120.12d | 2024-05-09 | 2024-10-24 |
| 104 | **Sprint 6** | 118.12d | 2024-04-29 | 2024-10-10 |

Changed:

| ID | Task | Start | Finish | Duration | Complete | Total float | Predecessors | Other |
| --- | --- | --- | --- | --- | --- | --- | --- | --- |
| 1 | **0. Desarrollo de software** | 2024-04-29 → 2024-04-27 A (-2d) | 2024-04-29 → 2024-10-24 (+178d) | 1d? → 128.88d? | 0% → 2% |  |  | was named Desarrollo de software |
| 3 | **1. Diseño de base de datos y configuracion de cloud.** | 2024-04-30 → 2024-04-29 A (-1d) | 2024-05-03 → 2024-05-02 (-1d) |  | 0% → 50% |  | 1 → none |  |
| 4 | 1.1. DER final del modelo de base de datos | 2024-04-30 → 2024-04-29 A (-1d) | 2024-05-02 A | 20h → 30h | 0% → 100% | 1.25d → none | 1 → none |  |
| 5 | 1.2. Clusterización y configuración del CLOUD | 2024-04-30 → 2024-04-29 (-1d) | 2024-05-03 → 2024-05-02 (-1d) |  |  |  | 1 → none |  |
| 6 | **2. Diseño arquitectura back end** | 2024-05-03 → 2024-05-02 (-1d) | 2024-05-30 → 2024-05-29 (-1d) |  |  |  |  |  |
| 7 | 2.1. Arquitectura en microservicios planificada, arquitectura CLOUD y arquitectura de paquetes estratégica para satisfacer servicios | 2024-05-03 → 2024-05-02 (-1d) | 2024-05-30 → 2024-05-29 (-1d) |  |  |  |  |  |
| 8 | **3. Diseño arquitectura front end** | 2024-05-30 → 2024-05-29 (-1d) | 2024-06-28 → 2024-06-27 (-1d) |  |  |  |  |  |
| 9 | 3.1. Arquitectura hexagonal evolutiva con integración de módulo de lectura archivo ADOBE.XD y mapeo a archivo de salida JSX. | 2024-05-30 → 2024-05-29 (-1d) | 2024-06-28 → 2024-06-27 (-1d) |  |  |  |  |  |
| 11 | **5. Módulo Login** | 2024-05-30 → 2024-05-29 (-1d) | 2024-06-12 → 2024-06-11 (-1d) |  |  |  |  |  |
| 12 | **5.1. ABM USUARIOS** | 2024-05-30 → 2024-05-29 (-1d) | 2024-05-30 → 2024-05-29 (-1d) |  |  |  |  |  |
| 13 | 5.1.1. Insertar usuarios | 2024-05-30 → 2024-05-29 (-1d) | 2024-05-30 → 2024-05-29 (-1d) |  |  |  |  |  |
| 14 | 5.1.2. Editar usuarios | 2024-05-30 → 2024-05-29 (-1d) | 2024-05-30 → 2024-05-29 (-1d) |  |  |  |  |  |
| 15 | 5.1.3. Borrar usuarios | 2024-05-30 → 2024-05-29 (-1d) | 2024-05-30 → 2024-05-29 (-1d) |  |  |  |  |  |
| 16 | 5.1.4. Obtener usuarios | 2024-05-30 → 2024-05-29 (-1d) | 2024-05-30 → 2024-05-29 (-1d) |  |  |  |  |  |
| 17 | 5.2. Servicio Login back end con seguridad JWT & comprobación de errores | 2024-05-30 → 2024-05-29 (-1d) | 2024-06-03 → 2024-05-31 (-3d) |  |  |  |  |  |
| 18 | 5.3. Integración de servicios front end en google, facebook, GOOGLE +, Slack e instagram. | 2024-06-03 → 2024-05-31 (-3d) | 2024-06-06 → 2024-06-05 (-1d) |  |  |  |  |  |
| 19 | 5.4. Vista completa front end con integración de back end | 2024-06-06 → 2024-06-05 (-1d) | 2024-06-11 → 2024-06-10 (-1d) |  |  |  |  |  |
| 20 | 5.5. Testeo modulo completo | 2024-06-12 → 2024-06-11 (-1d) | 2024-06-12 → 2024-06-11 (-1d) |  |  |  |  |  |
| 21 | **6. Módulo Home** |  | 2024-08-13 → 2024-08-12 (-1d) | 77d → 76d |  |  |  |  |
| 23 | 6.2. Servicios back end involucrando todas las funcionalidades del concepto de diseño. | 2024-06-13 → 2024-06-12 (-1d) | 2024-08-07 → 2024-08-06 (-1d) |  |  |  |  |  |
| 24 | 6.3. Vista front end completa con integración back end. | 2024-08-07 → 2024-08-06 (-1d) | 2024-08-12 → 2024-08-09 (-3d) |  |  |  |  |  |
| 25 | 6.4. Testeo modulo completo | 2024-08-13 → 2024-08-12 (-1d) | 2024-08-13 → 2024-08-12 (-1d) |  |  |  |  |  |
| 26 | **7. Módulo Compras** |  | 2024-08-27 → 2024-08-26 (-1d) | 85.75d → 84.75d |  |  |  |  |
| 28 | **7.2. Servicio back end de compras con las integraciones de método de pago:** | 2024-08-14 → 2024-08-13 (-1d) | 2024-08-16 → 2024-08-15 (-1d) |  |  |  |  |  |
| 29 | 7.2.1. Transferencia. | 2024-08-14 → 2024-08-13 (-1d) | 2024-08-15 → 2024-08-14 (-1d) |  |  |  |  |  |
| 30 | 7.2.2. Mercado pago | 2024-08-14 → 2024-08-13 (-1d) | 2024-08-15 → 2024-08-14 (-1d) |  |  |  |  |  |
| 31 | 7.2.3. Crypto | 2024-08-14 → 2024-08-13 (-1d) | 2024-08-15 → 2024-08-14 (-1d) |  |  |  |  |  |
| 32 | 7.2.4. Tarjeta de crédito | 2024-08-15 → 2024-08-14 (-1d) | 2024-08-16 → 2024-08-15 (-1d) |  |  |  |  |  |
| 33 | 7.2.5. Tarjeta de débito. | 2024-08-15 → 2024-08-14 (-1d) | 2024-08-16 → 2024-08-15 (-1d) |  |  |  |  |  |
| 34 | 7.3.Integración de prevención de fraude de tarjeta. | 2024-08-19 → 2024-08-16 (-3d) | 2024-08-20 → 2024-08-19 (-1d) |  |  |  |  |  |
| 35 | 7.4. Vista front end completa con integración de back end | 2024-08-19 → 2024-08-16 (-3d) | 2024-08-23 → 2024-08-22 (-1d) |  |  |  |  |  |
| 36 | 7.5. Testeo modulo completo | 2024-08-26 → 2024-08-23 (-3d) | 2024-08-27 → 2024-08-26 (-1d) |  |  |  |  |  |
| 38 | **8. Módulo de Búsqueda y Filtrado** |  | 2024-09-10 → 2024-09-09 (-1d) | 94.25d? → 93.25d? |  |  |  |  |
| 40 | 8.2. Servicio back end de búsqueda y filtrado contemplando las 15 formas de filtros diferentes incluyendo filtros dinámicos y estáticos. | 2024-08-28 → 2024-08-27 (-1d) | 2024-09-02 → 2024-08-30 (-3d) |  |  |  |  |  |
| 42 | 8.4. Vista front end completa con integración de back end. | 2024-09-02 → 2024-08-30 (-3d) | 2024-09-09 → 2024-09-06 (-3d) |  |  |  |  |  |
| 43 | 8.5. Testeo modulo completo | 2024-09-09 → 2024-09-06 (-3d) | 2024-09-10 → 2024-09-09 (-1d) |  |  |  |  |  |
| 44 | **9. Módulo Back Office User.** |  | 2024-09-18 → 2024-09-17 (-1d) | 98.62d → 97.62d |  |  |  |  |
| 46 | 9.2. Servicios de back end para la obtención de datos de ventas por usuario. | 2024-09-10 → 2024-09-09 (-1d) | 2024-09-12 → 2024-09-11 (-1d) |  |  |  |  |  |
| 47 | 9.3. Vista front end completa con integración de back end. | 2024-09-12 → 2024-09-11 (-1d) | 2024-09-17 → 2024-09-16 (-1d) |  |  |  |  |  |
| 48 | 9.4. Testeo modulo completo | 2024-09-17 → 2024-09-16 (-1d) | 2024-09-18 → 2024-09-17 (-1d) |  |  |  |  |  |
| 50 | **10. Back Office Admin** |  | 2024-09-30 → 2024-09-27 (-3d) | 105.62d → 104.62d |  |  |  |  |
| 52 | **10.2. ABM VENTAS** | 2024-09-18 → 2024-09-17 (-1d) | 2024-09-18 → 2024-09-17 (-1d) |  |  |  |  |  |
| 53 | 10.2.1.Insertar venta. | 2024-09-18 → 2024-09-17 (-1d) | 2024-09-18 → 2024-09-17 (-1d) |  |  |  |  |  |
| 54 | 10.2.2. Borrar venta. | 2024-09-18 → 2024-09-17 (-1d) | 2024-09-18 → 2024-09-17 (-1d) |  |  |  |  |  |
| 55 | 10.2.3. Editar venta. | 2024-09-18 → 2024-09-17 (-1d) | 2024-09-18 → 2024-09-17 (-1d) |  |  |  |  |  |
| 56 | 10.2.4. Obtener venta. | 2024-09-18 → 2024-09-17 (-1d) | 2024-09-18 → 2024-09-17 (-1d) |  |  |  |  |  |
| 57 | 10.3. Servicios back end para la obtención y filtrado de ventas. | 2024-09-18 → 2024-09-17 (-1d) | 2024-09-23 → 2024-09-20 (-3d) |  |  |  |  |  |
| 58 | 10.4. Servicios back end para la obtención de estadísticas. | 2024-09-18 → 2024-09-17 (-1d) | 2024-09-20 → 2024-09-19 (-1d) |  |  |  |  |  |
| 59 | 10.5. Vista front end completa con integración de back end. | 2024-09-23 → 2024-09-20 (-3d) | 2024-09-27 → 2024-09-26 (-1d) |  |  |  |  |  |
| 60 | 10.6. Testeo modulo completo | 2024-09-27 → 2024-09-26 (-1d) | 2024-09-30 → 2024-09-27 (-3d) |  |  |  |  |  |
| 61 | **11. Módulo Producto** |  | 2024-10-09 → 2024-10-08 (-1d) | 111.62d → 110.62d |  |  |  |  |
| 63 | 11.2. Servicios back end para la obtención de datos del producto, cálculo de envio y cálculo de pagos. | 2024-09-30 → 2024-09-27 (-3d) | 2024-10-03 → 2024-10-02 (-1d) |  |  |  |  |  |
| 64 | 11.3. Vista front end completa con integración de back end & integración SEO. | 2024-10-03 → 2024-10-02 (-1d) | 2024-10-08 → 2024-10-07 (-1d) |  |  |  |  |  |
| 65 | 11.4. Testeo modulo completo | 2024-10-08 → 2024-10-07 (-1d) | 2024-10-09 → 2024-10-08 (-1d) |  |  |  |  |  |
| 66 | **12. Modulo Ofertas** |  | 2024-10-17 → 2024-10-16 (-1d) | 116.12d → 115.12d |  |  |  |  |
| 68 | **12.2. ABM Ofertas** | 2024-10-09 → 2024-10-08 (-1d) | 2024-10-10 → 2024-10-09 (-1d) |  |  |  |  |  |
| 69 | 12.2.1. Insertar oferta. | 2024-10-09 → 2024-10-08 (-1d) | 2024-10-10 → 2024-10-09 (-1d) |  |  |  |  |  |
| 70 | 12.2.2. Editar oferta. | 2024-10-09 → 2024-10-08 (-1d) | 2024-10-10 → 2024-10-09 (-1d) |  |  |  |  |  |
| 71 | 12.2.3. Borrar oferta. | 2024-10-09 → 2024-10-08 (-1d) | 2024-10-10 → 2024-10-09 (-1d) |  |  |  |  |  |
| 72 | 12.2.4. Obtener oferta. | 2024-10-09 → 2024-10-08 (-1d) | 2024-10-10 → 2024-10-09 (-1d) |  |  |  |  |  |
| 73 | 12.3. Servicios back end para la obtención de productos de oferta. | 2024-10-10 → 2024-10-09 (-1d) | 2024-10-10 → 2024-10-09 (-1d) |  |  |  |  |  |
| 74 | 12.4. Vista front end completa en back office ADMIN con integración de back end. | 2024-10-10 → 2024-10-09 (-1d) | 2024-10-16 → 2024-10-15 (-1d) |  |  |  |  |  |
| 75 | 12.5. Testeo modulo completo | 2024-10-16 → 2024-10-15 (-1d) | 2024-10-17 → 2024-10-16 (-1d) |  |  |  |  |  |
| 82 | **14. Módulo notificaciones** |  | 2024-10-25 → 2024-10-24 (-1d) | 121.12d → 120.12d |  |  |  |  |
| 84 | **14.2. ABM NOTIFICACIONES** | 2024-10-17 → 2024-10-16 (-1d) | 2024-10-18 → 2024-10-17 (-1d) |  |  |  |  |  |
| 85 | 14.2.1. Insertar notificaciones. | 2024-10-17 → 2024-10-16 (-1d) | 2024-10-18 → 2024-10-17 (-1d) |  |  |  |  |  |
| 86 | 14.2.2. Editar notificaciones. | 2024-10-17 → 2024-10-16 (-1d) | 2024-10-18 → 2024-10-17 (-1d) |  |  |  |  |  |
| 87 | 14.2.3. Borrar notificaciones. | 2024-10-17 → 2024-10-16 (-1d) | 2024-10-18 → 2024-10-17 (-1d) |  |  |  |  |  |
| 88 | 14.2.4. Obtener notificaciones. | 2024-10-17 → 2024-10-16 (-1d) | 2024-10-18 → 2024-10-17 (-1d) |  |  |  |  |  |
| 89 | 14.3. Servicios back end para la inserción masiva de notificaciones. | 2024-10-18 → 2024-10-17 (-1d) | 2024-10-21 → 2024-10-18 (-3d) |  |  |  |  |  |

| ID | Task | Start | Finish | Duration |
| --- | --- | --- | --- | --- |
| 90 | 14.4. Servicios back end para la obtención de notificaciones del usuario. | 2024-10-18 → 2024-10-17 (-1d) | 2024-10-21 → 2024-10-18 (-3d) |  |
| 91 | 14.5. Vista front end dentro de back office admin completa con integración de back end. | 2024-10-21 → 2024-10-18 (-3d) | 2024-10-24 → 2024-10-23 (-1d) |  |
| 92 | 14.6. Testeo modulo completo | 2024-10-24 → 2024-10-23 (-1d) | 2024-10-25 → 2024-10-24 (-1d) |  |
| 93 | **15. Módulo Mailing** |  | 2024-08-28 → 2024-08-27 (-1d) | 78d → 77d |
| 94 | 15.1. Configuración de servidor de correos. | 2024-05-30 → 2024-05-29 (-1d) | 2024-05-31 → 2024-05-30 (-1d) |  |
| 95 | 15.2. Cumplimiento de políticas de seguridad y de contenido para el envio de correos sin entrar en black list. | 2024-08-21 → 2024-08-20 (-1d) | 2024-08-28 → 2024-08-27 (-1d) |  |
| 99 | 15.6. Servicios back end para la creación de correos por descuentos. | 2024-05-31 → 2024-05-30 (-1d) | 2024-06-05 → 2024-06-04 (-1d) |  |
| 100 | 15.7. Servicios back end para la creación de correos por ofertas. | 2024-06-05 → 2024-06-04 (-1d) | 2024-06-07 → 2024-06-06 (-1d) |  |
| 101 | 15.8. Servicios back end para la creación de correos por noticias propias | 2024-06-07 → 2024-06-06 (-1d) | 2024-06-12 → 2024-06-11 (-1d) |  |
| 102 | 15.9. Servicios back end con la integración de envío de correos por creación de venta o cambio de estado. | 2024-06-12 → 2024-06-11 (-1d) | 2024-06-14 → 2024-06-13 (-1d) |  |
| 103 | 15.10. Vista front dentro de back office admin completa con integración de back end | 2024-06-14 → 2024-06-13 (-1d) | 2024-06-21 → 2024-06-20 (-1d) |  |
| 105 | **4. Análisis de SEO** |  | 2024-10-11 → 2024-10-10 (-1d) | 119.12d → 118.12d |
| 106 | **4.1. Análisis estructural de posicionamiento orgánico de las vistas.** |  | 2024-10-11 → 2024-10-10 (-1d) | 119.12d → 118.12d |
| 107 | 4.1.1. Home. | 2024-08-14 → 2024-08-13 (-1d) | 2024-08-15 → 2024-08-14 (-1d) |  |
| 108 | 4.1.2. Producto. | 2024-10-09 → 2024-10-08 (-1d) | 2024-10-11 → 2024-10-10 (-1d) |  |
| 109 | 4.1.3. Búsqueda y filtrado. | 2024-09-10 → 2024-09-09 (-1d) | 2024-09-11 → 2024-09-10 (-1d) |  |
| 110 | 4.1.4. Landing page categorías. | 2024-09-12 → 2024-09-11 (-1d) | 2024-09-13 → 2024-09-12 (-1d) |  |

## Version 3 (saved 2024-05-06, file Cronograma de Tiempo V3.mpp)

Note of the change: fix predecesores

Last finish stays 2024-10-24.

Changed:

| ID | Task | Start | Finish | Duration | Total float | Predecessors |
| --- | --- | --- | --- | --- | --- | --- |
| 1 | **0. Desarrollo de software** |  |  | 128.88d? → 128.5d? |  |  |
| 17 | 5.2. Servicio Login back end con seguridad JWT & comprobación de errores |  |  |  |  | 12 → 16 |
| 57 | 10.3. Servicios back end para la obtención y filtrado de ventas. |  |  |  |  | 52 → 56 |
| 58 | 10.4. Servicios back end para la obtención de estadísticas. |  |  |  |  | 52 → 56 |
| 73 | 12.3. Servicios back end para la obtención de productos de oferta. |  |  |  |  | 68 → 72 |
| 81 | **Sprint 5** |  |  | 120.12d → 119.75d |  |  |
| 82 | **14. Módulo notificaciones** |  |  | 120.12d → 119.75d |  |  |
| 89 | 14.3. Servicios back end para la inserción masiva de notificaciones. |  |  |  |  | 84 → 88 |
| 90 | 14.4. Servicios back end para la obtención de notificaciones del usuario. |  | 2024-10-18 → 2024-10-17 (-1d) |  |  | 84 → 88 |
| 91 | 14.5. Vista front end dentro de back office admin completa con integración de back end. | 2024-10-18 → 2024-10-17 (-1d) |  |  |  |  |
| 107 | 4.1.1. Home. |  |  |  | 51.62d → 51.25d | 21 → 25 |
| 108 | 4.1.2. Producto. |  |  |  | 10.75d → 10.38d | 61 → 65 |
| 109 | 4.1.3. Búsqueda y filtrado. |  |  |  | 30.62d → 30.25d | 38 → 43 |

## Version 4 (saved 2024-05-06, file Cronograma de Tiempo V4.mpp)

Note of the change: fix v4

Last finish 2024-10-24 → 2024-10-25 (+1d).

Changed:

| ID | Task | Start | Finish | Duration | Complete | Total float |
| --- | --- | --- | --- | --- | --- | --- |
| 1 | **0. Desarrollo de software** |  | 2024-10-24 → 2024-10-25 (+1d) | 128.5d? → 130d? |  |  |
| 2 | **Sprint 1** |  | 2024-06-27 → 2024-07-04 (+7d) | 43.75d → 48.75d | 8% → 7% | 84.75d → 81.25d |
| 8 | **3. Diseño arquitectura front end** |  | 2024-06-27 → 2024-07-04 (+7d) | 21.25d → 26.25d |  | 84.75d → 81.25d |
| 9 | 3.1. Arquitectura hexagonal evolutiva con integración de módulo de lectura archivo ADOBE.XD y mapeo a archivo de salida JSX. |  | 2024-06-27 → 2024-07-04 (+7d) | 170h → 210h |  | 84.75d → 81.25d |
| 10 | **Sprint 2** |  | 2024-08-26 → 2024-08-28 (+2d) | 86d → 87.5d |  |  |
| 11 | **5. Módulo Login** |  | 2024-06-11 → 2024-06-13 (+2d) | 9.5d → 11d |  |  |
| 18 | 5.3. Integración de servicios front end en google, facebook, GOOGLE +, Slack e instagram. | 2024-05-31 → 2024-06-04 (+4d) | 2024-06-05 → 2024-06-06 (+1d) |  |  |  |
| 19 | 5.4. Vista completa front end con integración de back end | 2024-06-05 → 2024-06-06 (+1d) | 2024-06-10 → 2024-06-12 (+2d) |  |  |  |
| 20 | 5.5. Testeo modulo completo | 2024-06-11 → 2024-06-12 (+1d) | 2024-06-11 → 2024-06-13 (+2d) |  |  |  |
| 21 | **6. Módulo Home** |  | 2024-08-12 → 2024-08-14 (+2d) | 76d → 77.5d |  |  |
| 23 | 6.2. Servicios back end involucrando todas las funcionalidades del concepto de diseño. | 2024-06-12 → 2024-06-13 (+1d) | 2024-08-06 → 2024-08-07 (+1d) |  |  |  |
| 24 | 6.3. Vista front end completa con integración back end. | 2024-08-06 → 2024-08-07 (+1d) | 2024-08-09 → 2024-08-13 (+4d) |  |  |  |
| 25 | 6.4. Testeo modulo completo | 2024-08-12 → 2024-08-13 (+1d) | 2024-08-12 → 2024-08-14 (+2d) |  |  |  |
| 26 | **7. Módulo Compras** |  | 2024-08-26 → 2024-08-28 (+2d) | 84.75d → 86.25d |  |  |
| 28 | **7.2. Servicio back end de compras con las integraciones de método de pago:** | 2024-08-13 → 2024-08-14 (+1d) | 2024-08-15 → 2024-08-19 (+4d) |  |  |  |
| 29 | 7.2.1. Transferencia. | 2024-08-13 → 2024-08-14 (+1d) | 2024-08-14 → 2024-08-15 (+1d) |  |  |  |
| 30 | 7.2.2. Mercado pago | 2024-08-13 → 2024-08-14 (+1d) | 2024-08-14 → 2024-08-15 (+1d) |  |  |  |
| 31 | 7.2.3. Crypto | 2024-08-13 → 2024-08-14 (+1d) | 2024-08-14 → 2024-08-16 (+2d) |  |  |  |
| 32 | 7.2.4. Tarjeta de crédito | 2024-08-14 → 2024-08-16 (+2d) | 2024-08-15 → 2024-08-19 (+4d) |  |  |  |
| 33 | 7.2.5. Tarjeta de débito. | 2024-08-14 → 2024-08-16 (+2d) | 2024-08-15 → 2024-08-19 (+4d) |  |  |  |
| 34 | 7.3.Integración de prevención de fraude de tarjeta. | 2024-08-16 → 2024-08-19 (+3d) | 2024-08-19 → 2024-08-21 (+2d) |  |  |  |
| 35 | 7.4. Vista front end completa con integración de back end | 2024-08-16 → 2024-08-19 (+3d) | 2024-08-22 → 2024-08-26 (+4d) |  |  |  |
| 36 | 7.5. Testeo modulo completo | 2024-08-23 → 2024-08-26 (+3d) | 2024-08-26 → 2024-08-28 (+2d) |  |  |  |
| 37 | **Sprint 3** |  | 2024-09-17 → 2024-09-18 (+1d) | 98.88d? → 100.38d? |  | 24.62d → 27.12d |
| 38 | **8. Módulo de Búsqueda y Filtrado** |  | 2024-09-09 → 2024-09-11 (+2d) | 93.25d? → 94.75d? |  | 30.25d → 32.75d |
| 40 | 8.2. Servicio back end de búsqueda y filtrado contemplando las 15 formas de filtros diferentes incluyendo filtros dinámicos y estáticos. | 2024-08-27 → 2024-08-28 (+1d) | 2024-08-30 → 2024-09-03 (+4d) |  |  |  |
| 42 | 8.4. Vista front end completa con integración de back end. | 2024-08-30 → 2024-09-03 (+4d) | 2024-09-06 → 2024-09-10 (+4d) |  |  |  |
| 43 | 8.5. Testeo modulo completo | 2024-09-06 → 2024-09-10 (+4d) | 2024-09-09 → 2024-09-11 (+2d) |  |  |  |
| 44 | **9. Módulo Back Office User.** |  | 2024-09-17 → 2024-09-18 (+1d) | 97.62d → 99.12d |  |  |
| 46 | 9.2. Servicios de back end para la obtención de datos de ventas por usuario. | 2024-09-09 → 2024-09-11 (+2d) | 2024-09-11 → 2024-09-12 (+1d) |  |  |  |
| 47 | 9.3. Vista front end completa con integración de back end. | 2024-09-11 → 2024-09-12 (+1d) | 2024-09-16 → 2024-09-17 (+1d) |  |  |  |
| 48 | 9.4. Testeo modulo completo | 2024-09-16 → 2024-09-17 (+1d) | 2024-09-17 → 2024-09-18 (+1d) |  |  |  |
| 49 | **Sprint 4** |  | 2024-10-16 → 2024-10-18 (+2d) | 122.62d? → 124.12d |  |  |
| 50 | **10. Back Office Admin** |  | 2024-09-27 → 2024-10-01 (+4d) | 104.62d → 106.12d |  |  |
| 52 | **10.2. ABM VENTAS** | 2024-09-17 → 2024-09-18 (+1d) | 2024-09-17 → 2024-09-19 (+2d) |  |  |  |
| 53 | 10.2.1.Insertar venta. | 2024-09-17 → 2024-09-18 (+1d) | 2024-09-17 → 2024-09-19 (+2d) |  |  |  |
| 54 | 10.2.2. Borrar venta. | 2024-09-17 → 2024-09-18 (+1d) | 2024-09-17 → 2024-09-19 (+2d) |  |  |  |
| 55 | 10.2.3. Editar venta. | 2024-09-17 → 2024-09-18 (+1d) | 2024-09-17 → 2024-09-19 (+2d) |  |  |  |
| 56 | 10.2.4. Obtener venta. | 2024-09-17 → 2024-09-18 (+1d) | 2024-09-17 → 2024-09-19 (+2d) |  |  |  |
| 57 | 10.3. Servicios back end para la obtención y filtrado de ventas. | 2024-09-17 → 2024-09-19 (+2d) | 2024-09-20 → 2024-09-23 (+3d) |  |  |  |
| 58 | 10.4. Servicios back end para la obtención de estadísticas. | 2024-09-17 → 2024-09-19 (+2d) | 2024-09-19 → 2024-09-20 (+1d) |  |  |  |
| 59 | 10.5. Vista front end completa con integración de back end. | 2024-09-20 → 2024-09-23 (+3d) | 2024-09-26 → 2024-09-27 (+1d) |  |  |  |
| 60 | 10.6. Testeo modulo completo | 2024-09-26 → 2024-09-27 (+1d) | 2024-09-27 → 2024-10-01 (+4d) |  |  |  |
| 61 | **11. Módulo Producto** |  | 2024-10-08 → 2024-10-10 (+2d) | 110.62d → 112.12d |  |  |
| 63 | 11.2. Servicios back end para la obtención de datos del producto, cálculo de envio y cálculo de pagos. | 2024-09-27 → 2024-10-01 (+4d) | 2024-10-02 → 2024-10-03 (+1d) |  |  |  |
| 64 | 11.3. Vista front end completa con integración de back end & integración SEO. | 2024-10-02 → 2024-10-03 (+1d) | 2024-10-07 → 2024-10-09 (+2d) |  |  |  |
| 65 | 11.4. Testeo modulo completo | 2024-10-07 → 2024-10-09 (+2d) | 2024-10-08 → 2024-10-10 (+2d) |  |  |  |
| 66 | **12. Modulo Ofertas** |  | 2024-10-16 → 2024-10-18 (+2d) | 115.12d → 116.62d |  |  |
| 68 | **12.2. ABM Ofertas** | 2024-10-08 → 2024-10-10 (+2d) | 2024-10-09 → 2024-10-10 (+1d) |  |  |  |
| 69 | 12.2.1. Insertar oferta. | 2024-10-08 → 2024-10-10 (+2d) | 2024-10-09 → 2024-10-10 (+1d) |  |  |  |
| 70 | 12.2.2. Editar oferta. | 2024-10-08 → 2024-10-10 (+2d) | 2024-10-09 → 2024-10-10 (+1d) |  |  |  |
| 71 | 12.2.3. Borrar oferta. | 2024-10-08 → 2024-10-10 (+2d) | 2024-10-09 → 2024-10-10 (+1d) |  |  |  |
| 72 | 12.2.4. Obtener oferta. | 2024-10-08 → 2024-10-10 (+2d) | 2024-10-09 → 2024-10-10 (+1d) |  |  |  |
| 73 | 12.3. Servicios back end para la obtención de productos de oferta. | 2024-10-09 → 2024-10-10 (+1d) | 2024-10-09 → 2024-10-11 (+2d) |  |  |  |
| 74 | 12.4. Vista front end completa en back office ADMIN con integración de back end. | 2024-10-09 → 2024-10-11 (+2d) | 2024-10-15 → 2024-10-17 (+2d) |  |  |  |
| 75 | 12.5. Testeo modulo completo | 2024-10-15 → 2024-10-17 (+2d) | 2024-10-16 → 2024-10-18 (+2d) |  |  |  |
| 76 | **13. Módulo Ventas** |  |  | 0d? → 0d |  |  |
| 81 | **Sprint 5** |  | 2024-10-24 → 2024-10-25 (+1d) | 119.75d → 121.25d |  |  |
| 82 | **14. Módulo notificaciones** |  | 2024-10-24 → 2024-10-25 (+1d) | 119.75d → 121.25d |  |  |
| 84 | **14.2. ABM NOTIFICACIONES** | 2024-10-16 → 2024-10-18 (+2d) | 2024-10-17 → 2024-10-21 (+4d) | 0.88d → 1.38d |  |  |
| 85 | 14.2.1. Insertar notificaciones. | 2024-10-16 → 2024-10-18 (+2d) | 2024-10-17 → 2024-10-21 (+4d) |  |  | 5d → 4.5d |
| 86 | 14.2.2. Editar notificaciones. | 2024-10-16 → 2024-10-18 (+2d) | 2024-10-17 → 2024-10-18 (+1d) |  |  |  |
| 87 | 14.2.3. Borrar notificaciones. | 2024-10-16 → 2024-10-18 (+2d) | 2024-10-17 → 2024-10-18 (+1d) |  |  |  |
| 88 | 14.2.4. Obtener notificaciones. | 2024-10-16 → 2024-10-18 (+2d) | 2024-10-17 → 2024-10-18 (+1d) |  |  |  |
| 89 | 14.3. Servicios back end para la inserción masiva de notificaciones. | 2024-10-17 → 2024-10-18 (+1d) | 2024-10-18 → 2024-10-22 (+4d) |  |  |  |
| 90 | 14.4. Servicios back end para la obtención de notificaciones del usuario. | 2024-10-17 → 2024-10-18 (+1d) | 2024-10-17 → 2024-10-21 (+4d) |  |  |  |
| 91 | 14.5. Vista front end dentro de back office admin completa con integración de back end. | 2024-10-17 → 2024-10-21 (+4d) | 2024-10-23 → 2024-10-24 (+1d) |  |  |  |
| 92 | 14.6. Testeo modulo completo | 2024-10-23 → 2024-10-25 (+2d) | 2024-10-24 → 2024-10-25 (+1d) |  |  |  |
| 93 | **15. Módulo Mailing** |  | 2024-08-27 → 2024-08-29 (+2d) | 77d → 78.5d |  |  |
| 95 | 15.2. Cumplimiento de políticas de seguridad y de contenido para el envio de correos sin entrar en black list. | 2024-08-20 → 2024-08-21 (+1d) | 2024-08-27 → 2024-08-29 (+2d) |  |  |  |

| ID | Task | Start | Finish | Duration |
| --- | --- | --- | --- | --- |
| 104 | **Sprint 6** |  | 2024-10-10 → 2024-10-11 (+1d) | 118.12d → 119.62d |
| 105 | **4. Análisis de SEO** |  | 2024-10-10 → 2024-10-11 (+1d) | 118.12d → 119.62d |
| 106 | **4.1. Análisis estructural de posicionamiento orgánico de las vistas.** |  | 2024-10-10 → 2024-10-11 (+1d) | 118.12d → 119.62d |
| 107 | 4.1.1. Home. | 2024-08-13 → 2024-08-14 (+1d) | 2024-08-14 → 2024-08-15 (+1d) |  |
| 108 | 4.1.2. Producto. | 2024-10-08 → 2024-10-10 (+2d) | 2024-10-10 → 2024-10-11 (+1d) |  |
| 109 | 4.1.3. Búsqueda y filtrado. | 2024-09-09 → 2024-09-11 (+2d) | 2024-09-10 → 2024-09-12 (+2d) |  |
| 110 | 4.1.4. Landing page categorías. | 2024-09-11 → 2024-09-12 (+1d) | 2024-09-12 → 2024-09-13 (+1d) |  |

## Version 5 (saved 2024-05-07, file Cronograma de Tiempo.mpp)

Note of the change: r

Last finish stays 2024-10-25.

Removed: 76 13. Módulo Ventas; 77 13.1. Concepto UX diseñO; 78 13.2. Servicios back end que están involucrados en todo el circuito lógico de compras, incluyendo los pagos con tarjeta y la prevención de fraude.; 79 13.3. Vista front end completa con integración de back end; 80 13.4. Testeo modulo completo

Changed:

| ID | Task | Start | Duration | Total float | Other |
| --- | --- | --- | --- | --- | --- |
| 1 | **0. Desarrollo de software** | 2024-04-27 A → 2024-04-29 A (+2d) |  |  |  |
| 26 | **7. Módulo Ventas** |  |  |  | was named 7. Módulo Compras |
| 49 | **Sprint 4** | 2024-04-27 → 2024-05-06 (+9d) | 124.12d → 119.12d | 0d → 5.88d |  |
| 77 | **13. Módulo notificaciones** |  |  |  | was named 14. Módulo notificaciones |
| 78 | 13.1. Concepto UX diseño USER & BACK OFFICE |  |  | 101.62d → 103.12d | was named 14.1. Concepto UX diseño USER & BACK OFFICE |
| 79 | **13.2. ABM NOTIFICACIONES** |  |  |  | was named 14.2. ABM NOTIFICACIONES |
| 80 | 13.2.1. Insertar notificaciones. |  |  |  | was named 14.2.1. Insertar notificaciones. |
| 81 | 13.2.2. Editar notificaciones. |  |  |  | was named 14.2.2. Editar notificaciones. |
| 82 | 13.2.3. Borrar notificaciones. |  |  |  | was named 14.2.3. Borrar notificaciones. |
| 83 | 13.2.4. Obtener notificaciones. |  |  |  | was named 14.2.4. Obtener notificaciones. |
| 84 | 13.3. Servicios back end para la inserción masiva de notificaciones. |  |  |  | was named 14.3. Servicios back end para la inserción masiva de notificaciones. |
| 85 | 13.4. Servicios back end para la obtención de notificaciones del usuario. |  |  |  | was named 14.4. Servicios back end para la obtención de notificaciones del usuario. |
| 86 | 13.5. Vista front end dentro de back office admin completa con integración de back end. |  |  |  | was named 14.5. Vista front end dentro de back office admin completa con integración de back end. |
| 87 | 13.6. Testeo modulo completo |  |  |  | was named 14.6. Testeo modulo completo |
| 88 | **14. Módulo Mailing** |  |  |  | was named 15. Módulo Mailing |
| 89 | 14.1. Configuración de servidor de correos. |  |  | 90.38d → 91.88d | was named 15.1. Configuración de servidor de correos. |
| 90 | 14.2. Cumplimiento de políticas de seguridad y de contenido para el envio de correos sin entrar en black list. |  |  |  | was named 15.2. Cumplimiento de políticas de seguridad y de contenido para el envio de correos sin entrar en black list. |
| 91 | 14.3. Diseño UX para cada prototipo de correo de Marketing. |  |  | 101.62d → 103.12d | was named 15.3. Diseño UX para cada prototipo de correo de Marketing. |
| 92 | 14.4. Diseño UX para cada correo por venta realizada, cambios de estado de venta, de pago y de envio. |  |  | 101.62d → 103.12d | was named 15.4. Diseño UX para cada correo por venta realizada, cambios de estado de venta, de pago y de envio. |
| 93 | 14.5. Servicios back end para la creación de correos por Carrito abandonado. |  |  | 101.62d → 103.12d | was named 15.5. Servicios back end para la creación de correos por Carrito abandonado. |
| 94 | 14.6. Servicios back end para la creación de correos por descuentos. |  |  | 90.38d → 91.88d | was named 15.6. Servicios back end para la creación de correos por descuentos. |
| 95 | 14.7. Servicios back end para la creación de correos por ofertas. |  |  | 90.38d → 91.88d | was named 15.7. Servicios back end para la creación de correos por ofertas. |
| 96 | 14.8. Servicios back end para la creación de correos por noticias propias |  |  | 90.38d → 91.88d | was named 15.8. Servicios back end para la creación de correos por noticias propias |
| 97 | 14.9. Servicios back end con la integración de envío de correos por creación de venta o cambio de estado. |  |  | 90.38d → 91.88d | was named 15.9. Servicios back end con la integración de envío de correos por creación de venta o cambio de estado. |
| 98 | 14.10. Vista front dentro de back office admin completa con integración de back end |  |  | 90.38d → 91.88d | was named 15.10. Vista front dentro de back office admin completa con integración de back end |

## Version 6 (saved 2024-05-08, file Cronograma de Tiempo.mpp)

Last finish 2024-10-25 → 2024-10-29 (+4d).

Changed:

| ID | Task | Start | Finish | Duration | Total float | Predecessors | Other |
| --- | --- | --- | --- | --- | --- | --- | --- |
| 1 | **0. Desarrollo de software** |  | 2024-10-25 → 2024-10-29 (+4d) | 130d? → 131.25d? |  |  |  |
| 10 | **Sprint 2** | 2024-04-29 → 2024-05-29 (+30d) | 2024-08-28 → 2024-08-29 (+1d) | 87.5d → 66.25d | 22.5d → 0d |  |  |
| 21 | **6. Módulo Home** | 2024-04-29 → 2024-06-13 (+45d) | 2024-08-14 → 2024-08-15 (+1d) | 77.5d → 45.25d |  |  |  |
| 22 | 6.1. Concepto UX de diseño | 2024-04-29 → 2024-06-13 (+45d) | 2024-04-30 → 2024-06-14 (+45d) |  | 30.75d → 0d | none → 20 |  |
| 23 | 6.2. Servicios back end involucrando todas las funcionalidades del concepto de diseño. | 2024-06-13 → 2024-06-14 (+1d) | 2024-08-07 → 2024-08-08 (+1d) |  |  |  |  |
| 24 | 6.3. Vista front end completa con integración back end. | 2024-08-07 → 2024-08-09 (+2d) | 2024-08-13 → 2024-08-14 (+1d) |  |  |  |  |
| 25 | 6.4. Testeo modulo completo | 2024-08-13 → 2024-08-14 (+1d) | 2024-08-14 → 2024-08-15 (+1d) |  |  |  |  |
| 26 | **7. Módulo Ventas** | 2024-04-30 → 2024-06-14 (+45d) | 2024-08-28 → 2024-08-29 (+1d) | 86.25d → 54d |  |  |  |
| 27 | 7.1. Concepto UX de diseño | 2024-04-30 → 2024-06-14 (+45d) | 2024-05-01 → 2024-06-17 (+47d) |  | 101.62d → 70.88d |  |  |
| 28 | **7.2. Servicio back end de compras con las integraciones de método de pago:** | 2024-08-14 → 2024-08-15 (+1d) | 2024-08-19 → 2024-08-20 (+1d) |  |  |  |  |
| 29 | 7.2.1. Transferencia. | 2024-08-14 → 2024-08-15 (+1d) | 2024-08-15 → 2024-08-19 (+4d) |  |  |  |  |
| 30 | 7.2.2. Mercado pago | 2024-08-14 → 2024-08-15 (+1d) | 2024-08-15 → 2024-08-19 (+4d) |  |  |  |  |
| 31 | 7.2.3. Crypto | 2024-08-14 → 2024-08-15 (+1d) | 2024-08-16 → 2024-08-19 (+3d) |  |  |  |  |
| 32 | 7.2.4. Tarjeta de crédito | 2024-08-16 → 2024-08-19 (+3d) | 2024-08-19 → 2024-08-20 (+1d) |  |  |  |  |
| 33 | 7.2.5. Tarjeta de débito. | 2024-08-16 → 2024-08-19 (+3d) | 2024-08-19 → 2024-08-20 (+1d) |  |  |  |  |
| 34 | 7.3.Integración de prevención de fraude de tarjeta. | 2024-08-19 → 2024-08-20 (+1d) | 2024-08-21 → 2024-08-22 (+1d) |  |  |  |  |
| 35 | 7.4. Vista front end completa con integración de back end | 2024-08-19 → 2024-08-20 (+1d) | 2024-08-26 → 2024-08-27 (+1d) |  |  |  |  |
| 36 | 7.5. Testeo modulo completo | 2024-08-26 → 2024-08-27 (+1d) | 2024-08-28 → 2024-08-29 (+1d) |  |  |  |  |
| 37 | **Sprint 3** | 2024-05-01 → 2024-06-18 (+48d) | 2024-09-18 → 2024-09-20 (+2d) | 100.38d? → 68.12d? |  |  |  |
| 38 | **8. Módulo de Búsqueda y Filtrado** | 2024-05-01 → 2024-06-18 (+48d) | 2024-09-11 → 2024-09-12 (+1d) | 94.75d? → 62.5d? |  |  |  |
| 39 | 8.1. Concepto UX de diseño | 2024-05-01 → 2024-06-18 (+48d) | 2024-05-02 → 2024-06-19 (+48d) |  | 101.62d → 70.88d |  | resources Matias Benites → Luciano Ghelfi |
| 40 | 8.2. Servicio back end de búsqueda y filtrado contemplando las 15 formas de filtros diferentes incluyendo filtros dinámicos y estáticos. | 2024-08-28 → 2024-08-29 (+1d) | 2024-09-03 → 2024-09-04 (+1d) |  |  |  |  |
| 41 | 8.3. Concepto UX de integración de Landing page de categorías. | 2024-05-02 → 2024-06-19 (+48d) | 2024-05-06 → 2024-06-21 (+46d) |  | 120.38d → 92.12d |  |  |
| 42 | 8.4. Vista front end completa con integración de back end. | 2024-09-03 → 2024-09-04 (+1d) | 2024-09-10 → 2024-09-11 (+1d) |  |  |  |  |
| 43 | 8.5. Testeo modulo completo | 2024-09-10 → 2024-09-11 (+1d) | 2024-09-11 → 2024-09-12 (+1d) |  |  |  |  |
| 44 | **9. Módulo Back Office User.** | 2024-05-02 → 2024-06-19 (+48d) | 2024-09-18 → 2024-09-20 (+2d) | 99.12d → 66.88d |  |  |  |
| 45 | 9.1. Concepto UX diseño. | 2024-05-02 → 2024-06-19 (+48d) | 2024-05-03 → 2024-06-20 (+48d) |  | 101.62d → 70.88d |  |  |
| 46 | 9.2. Servicios de back end para la obtención de datos de ventas por usuario. | 2024-09-11 → 2024-09-12 (+1d) | 2024-09-12 → 2024-09-13 (+1d) |  |  |  |  |
| 47 | 9.3. Vista front end completa con integración de back end. | 2024-09-12 → 2024-09-16 (+4d) | 2024-09-17 → 2024-09-19 (+2d) |  |  |  |  |
| 48 | 9.4. Testeo modulo completo | 2024-09-17 → 2024-09-19 (+2d) | 2024-09-18 → 2024-09-20 (+2d) |  |  |  |  |
| 49 | **Sprint 4** | 2024-05-06 → 2024-06-20 (+45d) | 2024-10-18 → 2024-10-21 (+3d) | 119.12d → 86.88d |  |  |  |
| 50 | **10. Back Office Admin** | 2024-05-06 → 2024-06-20 (+45d) | 2024-10-01 → 2024-10-02 (+1d) | 106.12d → 73.88d |  |  |  |
| 51 | 10.1. Concepto UX diseño. | 2024-05-06 → 2024-06-20 (+45d) | 2024-05-07 → 2024-06-21 (+45d) |  | 103.12d → 70.88d |  |  |
| 52 | **10.2. ABM VENTAS** | 2024-09-18 → 2024-09-20 (+2d) | 2024-09-19 → 2024-09-20 (+1d) |  |  |  |  |
| 53 | 10.2.1.Insertar venta. | 2024-09-18 → 2024-09-20 (+2d) | 2024-09-19 → 2024-09-20 (+1d) |  |  |  |  |
| 54 | 10.2.2. Borrar venta. | 2024-09-18 → 2024-09-20 (+2d) | 2024-09-19 → 2024-09-20 (+1d) |  |  |  |  |
| 55 | 10.2.3. Editar venta. | 2024-09-18 → 2024-09-20 (+2d) | 2024-09-19 → 2024-09-20 (+1d) |  |  |  |  |
| 56 | 10.2.4. Obtener venta. | 2024-09-18 → 2024-09-20 (+2d) | 2024-09-19 → 2024-09-20 (+1d) |  |  |  |  |
| 57 | 10.3. Servicios back end para la obtención y filtrado de ventas. | 2024-09-19 → 2024-09-20 (+1d) | 2024-09-23 → 2024-09-25 (+2d) |  |  |  |  |
| 58 | 10.4. Servicios back end para la obtención de estadísticas. | 2024-09-19 → 2024-09-20 (+1d) | 2024-09-20 → 2024-09-24 (+4d) |  |  |  |  |
| 59 | 10.5. Vista front end completa con integración de back end. | 2024-09-23 → 2024-09-25 (+2d) | 2024-09-27 → 2024-09-30 (+3d) |  |  |  |  |
| 60 | 10.6. Testeo modulo completo | 2024-09-27 → 2024-09-30 (+3d) | 2024-10-01 → 2024-10-02 (+1d) |  |  |  |  |
| 61 | **11. Módulo Producto** | 2024-05-07 → 2024-06-21 (+45d) | 2024-10-10 → 2024-10-11 (+1d) | 112.12d → 79.88d |  |  |  |
| 62 | 11.1. Concepto UX diseño. | 2024-05-07 → 2024-06-21 (+45d) | 2024-05-08 → 2024-06-24 (+47d) |  | 103.12d → 70.88d |  |  |
| 63 | 11.2. Servicios back end para la obtención de datos del producto, cálculo de envio y cálculo de pagos. | 2024-10-01 → 2024-10-02 (+1d) | 2024-10-03 → 2024-10-04 (+1d) |  |  |  |  |
| 64 | 11.3. Vista front end completa con integración de back end & integración SEO. | 2024-10-03 → 2024-10-04 (+1d) | 2024-10-09 → 2024-10-10 (+1d) |  |  |  |  |
| 65 | 11.4. Testeo modulo completo | 2024-10-09 → 2024-10-10 (+1d) | 2024-10-10 → 2024-10-11 (+1d) |  |  |  |  |
| 66 | **12. Modulo Ofertas** | 2024-05-08 → 2024-06-25 (+48d) | 2024-10-18 → 2024-10-21 (+3d) | 116.62d → 84.38d |  |  |  |
| 67 | 12.1. Concepto UX diseño USER & BACK OFFICE | 2024-05-08 → 2024-06-25 (+48d) | 2024-05-09 → 2024-06-26 (+48d) |  | 103.12d → 70.88d |  |  |
| 68 | **12.2. ABM Ofertas** | 2024-10-10 → 2024-10-11 (+1d) | 2024-10-10 → 2024-10-11 (+1d) |  |  |  |  |
| 69 | 12.2.1. Insertar oferta. | 2024-10-10 → 2024-10-11 (+1d) | 2024-10-10 → 2024-10-11 (+1d) |  |  |  |  |
| 70 | 12.2.2. Editar oferta. | 2024-10-10 → 2024-10-11 (+1d) | 2024-10-10 → 2024-10-11 (+1d) |  |  |  |  |
| 71 | 12.2.3. Borrar oferta. | 2024-10-10 → 2024-10-11 (+1d) | 2024-10-10 → 2024-10-11 (+1d) |  |  |  |  |
| 72 | 12.2.4. Obtener oferta. | 2024-10-10 → 2024-10-11 (+1d) | 2024-10-10 → 2024-10-11 (+1d) |  |  |  |  |
| 73 | 12.3. Servicios back end para la obtención de productos de oferta. | 2024-10-10 → 2024-10-14 (+4d) | 2024-10-11 → 2024-10-14 (+3d) |  |  |  |  |
| 74 | 12.4. Vista front end completa en back office ADMIN con integración de back end. | 2024-10-11 → 2024-10-14 (+3d) | 2024-10-17 → 2024-10-18 (+1d) |  |  |  |  |
| 75 | 12.5. Testeo modulo completo | 2024-10-17 → 2024-10-18 (+1d) | 2024-10-18 → 2024-10-21 (+3d) |  |  |  |  |
| 76 | **Sprint 5** | 2024-05-09 → 2024-05-29 (+20d) | 2024-10-25 → 2024-10-29 (+4d) | 121.25d → 108.75d |  |  |  |
| 77 | **13. Módulo notificaciones** | 2024-05-09 → 2024-06-26 (+48d) | 2024-10-25 → 2024-10-29 (+4d) | 121.25d → 89d |  |  |  |
| 78 | 13.1. Concepto UX diseño USER & BACK OFFICE | 2024-05-09 → 2024-06-26 (+48d) | 2024-05-10 → 2024-06-27 (+48d) |  | 103.12d → 70.88d |  |  |
| 79 | **13.2. ABM NOTIFICACIONES** | 2024-10-18 → 2024-10-21 (+3d) | 2024-10-21 → 2024-10-22 (+1d) |  |  |  |  |
| 80 | 13.2.1. Insertar notificaciones. | 2024-10-18 → 2024-10-21 (+3d) | 2024-10-21 → 2024-10-22 (+1d) |  |  |  |  |
| 81 | 13.2.2. Editar notificaciones. | 2024-10-18 → 2024-10-21 (+3d) | 2024-10-18 → 2024-10-21 (+3d) |  |  |  |  |
| 82 | 13.2.3. Borrar notificaciones. | 2024-10-18 → 2024-10-21 (+3d) | 2024-10-18 → 2024-10-21 (+3d) |  |  |  |  |
| 83 | 13.2.4. Obtener notificaciones. | 2024-10-18 → 2024-10-21 (+3d) | 2024-10-18 → 2024-10-21 (+3d) |  |  |  |  |
| 84 | 13.3. Servicios back end para la inserción masiva de notificaciones. | 2024-10-18 → 2024-10-21 (+3d) | 2024-10-22 → 2024-10-23 (+1d) |  |  |  |  |
| 85 | 13.4. Servicios back end para la obtención de notificaciones del usuario. | 2024-10-18 → 2024-10-21 (+3d) | 2024-10-21 → 2024-10-22 (+1d) |  |  |  |  |
| 86 | 13.5. Vista front end dentro de back office admin completa con integración de back end. | 2024-10-21 → 2024-10-22 (+1d) | 2024-10-24 → 2024-10-28 (+4d) |  |  |  |  |
| 87 | 13.6. Testeo modulo completo | 2024-10-25 → 2024-10-28 (+3d) | 2024-10-25 → 2024-10-29 (+4d) |  |  |  |  |
| 88 | **14. Módulo Mailing** | 2024-05-13 → 2024-05-29 (+16d) | 2024-08-29 → 2024-08-30 (+1d) | 78.5d → 67.25d |  |  |  |

| ID | Task | Start | Finish | Duration | Total float | Predecessors |
| --- | --- | --- | --- | --- | --- | --- |
| 90 | 14.2. Cumplimiento de políticas de seguridad y de contenido para el envio de correos sin entrar en black list. | 2024-08-21 → 2024-08-22 (+1d) | 2024-08-29 → 2024-08-30 (+1d) |  |  |  |
| 91 | 14.3. Diseño UX para cada prototipo de correo de Marketing. | 2024-05-13 → 2024-06-27 (+45d) | 2024-05-15 → 2024-07-01 (+47d) |  | 103.12d → 70.88d |  |
| 92 | 14.4. Diseño UX para cada correo por venta realizada, cambios de estado de venta, de pago y de envio. | 2024-05-15 → 2024-07-02 (+48d) | 2024-05-17 → 2024-07-04 (+48d) |  | 103.12d → 70.88d |  |
| 93 | 14.5. Servicios back end para la creación de correos por Carrito abandonado. | 2024-05-20 → 2024-07-04 (+45d) | 2024-05-22 → 2024-07-08 (+47d) |  | 103.12d → 70.88d |  |
| 96 | 14.8. Servicios back end para la creación de correos por noticias propias | 2024-06-06 → 2024-07-09 (+33d) | 2024-06-11 → 2024-07-11 (+30d) |  | 91.88d → 70.88d |  |
| 97 | 14.9. Servicios back end con la integración de envío de correos por creación de venta o cambio de estado. | 2024-06-11 → 2024-07-11 (+30d) | 2024-06-13 → 2024-07-15 (+32d) |  | 91.88d → 70.88d |  |
| 98 | 14.10. Vista front dentro de back office admin completa con integración de back end | 2024-06-13 → 2024-07-16 (+33d) | 2024-06-20 → 2024-07-22 (+32d) |  | 91.88d → 70.88d |  |
| 99 | **Sprint 6** | 2024-04-29 → 2024-08-15 (+108d) | 2024-10-11 → 2024-10-14 (+3d) | 119.62d → 42.12d |  |  |
| 100 | **4. Análisis de SEO** | 2024-04-29 → 2024-08-15 (+108d) | 2024-10-11 → 2024-10-14 (+3d) | 119.62d → 42.12d |  |  |
| 101 | **4.1. Análisis estructural de posicionamiento orgánico de las vistas.** | 2024-04-29 → 2024-08-15 (+108d) | 2024-10-11 → 2024-10-14 (+3d) | 119.62d → 42.12d |  |  |
| 102 | 4.1.1. Home. | 2024-08-14 → 2024-08-15 (+1d) | 2024-08-15 → 2024-08-16 (+1d) |  |  |  |
| 103 | 4.1.2. Producto. | 2024-10-10 → 2024-10-11 (+1d) | 2024-10-11 → 2024-10-14 (+3d) |  |  |  |
| 104 | 4.1.3. Búsqueda y filtrado. | 2024-09-11 → 2024-09-12 (+1d) | 2024-09-12 → 2024-09-13 (+1d) |  | 30.25d → 29d |  |
| 105 | 4.1.4. Landing page categorías. | 2024-09-12 → 2024-09-13 (+1d) | 2024-09-13 → 2024-09-16 (+3d) |  | 30.25d → 29d |  |
| 106 | 4.1.5. Landing page marcas. | 2024-04-29 → 2024-09-17 (+141d) | 2024-04-30 → 2024-09-18 (+141d) |  | 128.75d → 29d | none → 105 |

## Version 7 (saved 2024-05-14, file Cronograma de Tiempo.mpp)

Note of the change: se agrega el buffer de contingencia por sprint

Last finish stays 2024-10-29.

Added:

| ID | Task | Duration | Start | Finish |
| --- | --- | --- | --- | --- |
| 10 | Reserva contingencia SPRINT 1 | 0d | 2024-04-27 | 2024-04-27 |
| 38 | Reserva contingencia SPRINT 2 | 0d | 2024-04-27 | 2024-04-27 |
| 51 | Reserva contingencia SPRINT 3 | 0d | 2024-04-27 | 2024-04-27 |
| 79 | Reserva contingencia SPRINT 4 | 0d | 2024-04-27 | 2024-04-27 |
| 103 | Reserva contingencia SPRINT 5 | 0d | 2024-04-27 | 2024-04-27 |
| 112 | Reserva contingencia SPRINT 6 | 0d | 2024-04-27 | 2024-04-27 |

Changed:

| ID | Task | Start | Duration | Total float |
| --- | --- | --- | --- | --- |
| 1 | **0. Desarrollo de software** | 2024-04-29 A → 2024-04-27 A (-2d) |  |  |
| 2 | **Sprint 1** | 2024-04-29 A → 2024-04-27 A (-2d) |  |  |
| 11 | **Sprint 2** | 2024-05-29 → 2024-04-27 (-32d) | 66.25d → 88.75d | 0d → 22.5d |
| 39 | **Sprint 3** | 2024-06-18 → 2024-04-27 (-52d) | 68.12d? → 104.12d? |  |
| 52 | **Sprint 4** | 2024-06-20 → 2024-04-27 (-54d) | 86.88d → 125.38d |  |
| 80 | **Sprint 5** | 2024-05-29 → 2024-04-27 (-32d) | 108.75d → 131.25d |  |
| 104 | **Sprint 6** | 2024-08-15 → 2024-04-27 (-110d) | 42.12d → 120.88d |  |

## Version 8 (saved 2024-05-15, file Cronograma de Tiempo.mpp)

Note of the change: se agregan predecesoras en las reservas de contingencia

Last finish stays 2024-10-29.

Changed:

| ID | Task | Start | Finish | Duration | Total float | Predecessors |
| --- | --- | --- | --- | --- | --- | --- |
| 1 | **0. Desarrollo de software** | 2024-04-27 A → 2024-04-29 A (+2d) |  |  |  |  |
| 2 | **Sprint 1** | 2024-04-27 A → 2024-04-29 A (+2d) |  |  |  |  |
| 10 | Reserva contingencia SPRINT 1 | 2024-04-27 → 2024-07-04 (+68d) | 2024-04-27 → 2024-07-04 (+68d) |  | 131.25d → 82.5d | none → 9 |
| 11 | **Sprint 2** | 2024-04-27 → 2024-05-29 (+32d) |  | 88.75d → 66.25d | 22.5d → 0d |  |
| 38 | Reserva contingencia SPRINT 2 | 2024-04-27 → 2024-08-29 (+124d) | 2024-04-27 → 2024-08-29 (+124d) |  | 131.25d → 42.5d | none → 37 |
| 39 | **Sprint 3** | 2024-04-27 → 2024-06-18 (+52d) |  | 104.12d? → 68.12d? |  |  |
| 51 | Reserva contingencia SPRINT 3 | 2024-04-27 → 2024-09-20 (+146d) | 2024-04-27 → 2024-09-20 (+146d) |  | 131.25d → 27.12d | none → 50 |
| 52 | **Sprint 4** | 2024-04-27 → 2024-06-20 (+54d) |  | 125.38d → 86.88d |  |  |
| 79 | Reserva contingencia SPRINT 4 | 2024-04-27 → 2024-10-21 (+177d) | 2024-04-27 → 2024-10-21 (+177d) |  | 131.25d → 5.88d | none → 78 |
| 80 | **Sprint 5** | 2024-04-27 → 2024-05-29 (+32d) |  | 131.25d → 108.75d |  |  |
| 103 | Reserva contingencia SPRINT 5 | 2024-04-27 → 2024-07-22 (+86d) | 2024-04-27 → 2024-07-22 (+86d) |  | 131.25d → 70.88d | none → 102 |
| 104 | **Sprint 6** | 2024-04-27 → 2024-08-15 (+110d) |  | 120.88d → 42.12d |  |  |
| 112 | Reserva contingencia SPRINT 6 | 2024-04-27 → 2024-09-18 (+144d) | 2024-04-27 → 2024-09-18 (+144d) |  | 131.25d → 29d | none → 111 |

## Version 9 (saved 2024-06-02, file Cronograma de Tiempo.mpp)

Note of the change: Se agrega el porcentaje de tareas terminda para cierre de sprint 1

Last finish stays 2024-10-29. Complete tasks 1 → 21.

Changed:

| ID | Task | Start | Finish | Complete | Total float |
| --- | --- | --- | --- | --- | --- |
| 1 | **0. Desarrollo de software** |  |  | 2% → 41% |  |
| 2 | **Sprint 1** |  |  | 7% → 98% | 82.5d → none |
| 3 | **1. Diseño de base de datos y configuracion de cloud.** |  |  | 50% → 88% | 0d → 127.5d |
| 5 | 1.2. Clusterización y configuración del CLOUD | 2024-04-29 A |  | 0% → 75% | 0d → 127.5d |
| 6 | **2. Diseño arquitectura back end** | 2024-05-02 A | 2024-05-29 A | 0% → 100% | 0d → none |
| 7 | 2.1. Arquitectura en microservicios planificada, arquitectura CLOUD y arquitectura de paquetes estratégica para satisfacer servicios | 2024-05-02 A | 2024-05-29 A | 0% → 100% | 0d → none |
| 8 | **3. Diseño arquitectura front end** | 2024-05-29 A | 2024-07-04 A | 0% → 100% | 82.5d → none |
| 9 | 3.1. Arquitectura hexagonal evolutiva con integración de módulo de lectura archivo ADOBE.XD y mapeo a archivo de salida JSX. | 2024-05-29 A | 2024-07-04 A | 0% → 100% | 82.5d → none |
| 11 | **Sprint 2** | 2024-05-29 A |  | 0% → 33% | 0d → 42.5d |
| 12 | **5. Módulo Login** | 2024-05-29 A | 2024-06-13 A | 0% → 100% | 0d → none |
| 13 | **5.1. ABM USUARIOS** | 2024-05-29 A | 2024-05-29 A | 0% → 100% | 0d → none |
| 14 | 5.1.1. Insertar usuarios | 2024-05-29 A | 2024-05-29 A | 0% → 100% | 108.38d → none |
| 15 | 5.1.2. Editar usuarios | 2024-05-29 A | 2024-05-29 A | 0% → 100% | 108.38d → none |
| 16 | 5.1.3. Borrar usuarios | 2024-05-29 A | 2024-05-29 A | 0% → 100% | 108.38d → none |
| 17 | 5.1.4. Obtener usuarios | 2024-05-29 A | 2024-05-29 A | 0% → 100% | 0d → none |
| 18 | 5.2. Servicio Login back end con seguridad JWT & comprobación de errores | 2024-05-29 A | 2024-05-31 A | 0% → 100% | 0d → none |
| 19 | 5.3. Integración de servicios front end en google, facebook, GOOGLE +, Slack e instagram. | 2024-06-04 A | 2024-06-06 A | 0% → 100% | 0d → none |
| 20 | 5.4. Vista completa front end con integración de back end | 2024-06-06 A | 2024-06-12 A | 0% → 100% | 0d → none |
| 21 | 5.5. Testeo modulo completo | 2024-06-12 A | 2024-06-13 A | 0% → 100% | 0d → none |
| 22 | **6. Módulo Home** | 2024-06-13 A |  | 0% → 11% |  |
| 23 | 6.1. Concepto UX de diseño | 2024-06-13 A | 2024-06-14 A | 0% → 100% | 0d → none |
| 27 | **7. Módulo Ventas** | 2024-06-14 A |  | 0% → 7% |  |
| 28 | 7.1. Concepto UX de diseño | 2024-06-14 A | 2024-06-17 A | 0% → 100% | 70.88d → none |
| 39 | **Sprint 3** | 2024-06-18 A |  | 0% → 13% |  |
| 40 | **8. Módulo de Búsqueda y Filtrado** | 2024-06-18 A |  | 0% → 10% |  |
| 41 | 8.1. Concepto UX de diseño | 2024-06-18 A | 2024-06-19 A | 0% → 100% | 70.88d → none |
| 46 | **9. Módulo Back Office User.** | 2024-06-19 A |  | 0% → 18% | 5.25d → 0d |
| 47 | 9.1. Concepto UX diseño. | 2024-06-19 A | 2024-06-20 A | 0% → 100% | 70.88d → none |
| 52 | **Sprint 4** | 2024-06-20 A |  | 0% → 13% |  |
| 53 | **10. Back Office Admin** | 2024-06-20 A |  | 0% → 10% |  |
| 54 | 10.1. Concepto UX diseño. | 2024-06-20 A | 2024-06-21 A | 0% → 100% | 70.88d → none |
| 64 | **11. Módulo Producto** | 2024-06-21 A |  | 0% → 15% |  |
| 65 | 11.1. Concepto UX diseño. | 2024-06-21 A | 2024-06-24 A | 0% → 100% | 70.88d → none |
| 69 | **12. Modulo Ofertas** | 2024-06-25 A |  | 0% → 15% |  |
| 70 | 12.1. Concepto UX diseño USER & BACK OFFICE | 2024-06-25 A | 2024-06-26 A | 0% → 100% | 70.88d → none |
| 80 | **Sprint 5** | 2024-05-29 A |  | 0% → 16% |  |
| 81 | **13. Módulo notificaciones** | 2024-06-26 A |  | 0% → 12% |  |
| 82 | 13.1. Concepto UX diseño USER & BACK OFFICE | 2024-06-26 A | 2024-06-27 A | 0% → 100% | 70.88d → none |
| 92 | **14. Módulo Mailing** | 2024-05-29 A |  | 0% → 17% |  |
| 95 | 14.3. Diseño UX para cada prototipo de correo de Marketing. | 2024-06-27 A | 2024-07-01 A | 0% → 100% | 70.88d → none |
| 96 | 14.4. Diseño UX para cada correo por venta realizada, cambios de estado de venta, de pago y de envio. | 2024-07-02 A | 2024-07-04 A | 0% → 100% | 70.88d → none |

## Version 10 (saved 2024-06-04, file Cronograma de Tiempo.mpp)

Note of the change: se modifica el cronograma para agregar porcentaje e informe costos

Last finish 2024-10-29 → 2024-10-25 (-4d). Complete tasks 21 → 2.

Changed:

| ID | Task | Start | Finish | Duration | Complete | Total float | Other |
| --- | --- | --- | --- | --- | --- | --- | --- |
| 1 | **0. Desarrollo de software** |  | 2024-10-29 → 2024-10-25 (-4d) | 131.25d? → 129.75d? | 41% → 8% |  | baseline start none → 2024-04-29; baseline finish none → 2024-10-25 |
| 2 | **Sprint 1** |  |  |  | 98% → 29% | none → 81d | baseline start none → 2024-04-29; baseline finish none → 2024-07-04 |
| 3 | **1. Diseño de base de datos y configuracion de cloud.** |  | 2024-05-02 A |  | 88% → 100% | 127.5d → none | baseline start none → 2024-04-29; baseline finish none → 2024-05-02 |
| 4 | 1.1. DER final del modelo de base de datos |  |  |  |  |  | baseline start none → 2024-04-29; baseline finish none → 2024-05-02 |
| 5 | 1.2. Clusterización y configuración del CLOUD |  | 2024-05-02 A |  | 75% → 100% | 127.5d → none | baseline start none → 2024-04-29; baseline finish none → 2024-05-02 |
| 6 | **2. Diseño arquitectura back end** |  | 2024-05-29 A → 2024-05-29 |  | 100% → 40% | none → 0d | baseline start none → 2024-05-02; baseline finish none → 2024-05-29 |
| 7 | 2.1. Arquitectura en microservicios planificada, arquitectura CLOUD y arquitectura de paquetes estratégica para satisfacer servicios |  | 2024-05-29 A → 2024-05-29 |  | 100% → 40% | none → 0d | baseline start none → 2024-05-02; baseline finish none → 2024-05-29 |
| 8 | **3. Diseño arquitectura front end** | 2024-05-29 A → 2024-05-29 | 2024-07-04 A → 2024-07-04 |  | 100% → 0% | none → 81d | baseline start none → 2024-05-29; baseline finish none → 2024-07-04 |
| 9 | 3.1. Arquitectura hexagonal evolutiva con integración de módulo de lectura archivo ADOBE.XD y mapeo a archivo de salida JSX. | 2024-05-29 A → 2024-05-29 | 2024-07-04 A → 2024-07-04 |  | 100% → 0% | none → 81d | baseline start none → 2024-05-29; baseline finish none → 2024-07-04 |
| 10 | Reserva contingencia SPRINT 1 |  |  |  |  | 82.5d → 81d | baseline start none → 2024-07-04; baseline finish none → 2024-07-04 |
| 11 | **Sprint 2** | 2024-05-29 A → 2024-05-29 | 2024-08-29 → 2024-08-28 (-1d) | 66.25d → 64.75d | 33% → 0% | 42.5d → 0d | baseline start none → 2024-05-29; baseline finish none → 2024-08-28 |
| 12 | **5. Módulo Login** | 2024-05-29 A → 2024-05-29 | 2024-06-13 A → 2024-06-11 (-2d) | 11d → 9.5d | 100% → 0% | none → 0d | baseline start none → 2024-05-29; baseline finish none → 2024-06-11 |
| 13 | **5.1. ABM USUARIOS** | 2024-05-29 A → 2024-05-29 | 2024-05-29 A → 2024-05-29 |  | 100% → 0% | none → 0d | baseline start none → 2024-05-29; baseline finish none → 2024-05-29 |
| 14 | 5.1.1. Insertar usuarios | 2024-05-29 A → 2024-05-29 | 2024-05-29 A → 2024-05-29 |  | 100% → 0% | none → 106.88d | baseline start none → 2024-05-29; baseline finish none → 2024-05-29 |
| 15 | 5.1.2. Editar usuarios | 2024-05-29 A → 2024-05-29 | 2024-05-29 A → 2024-05-29 |  | 100% → 0% | none → 106.88d | baseline start none → 2024-05-29; baseline finish none → 2024-05-29 |
| 16 | 5.1.3. Borrar usuarios | 2024-05-29 A → 2024-05-29 | 2024-05-29 A → 2024-05-29 |  | 100% → 0% | none → 106.88d | baseline start none → 2024-05-29; baseline finish none → 2024-05-29 |
| 17 | 5.1.4. Obtener usuarios | 2024-05-29 A → 2024-05-29 | 2024-05-29 A → 2024-05-29 |  | 100% → 0% | none → 0d | baseline start none → 2024-05-29; baseline finish none → 2024-05-29 |
| 18 | 5.2. Servicio Login back end con seguridad JWT & comprobación de errores | 2024-05-29 A → 2024-05-29 | 2024-05-31 A → 2024-05-31 |  | 100% → 0% | none → 0d | baseline start none → 2024-05-29; baseline finish none → 2024-05-31 |
| 19 | 5.3. Integración de servicios front end en google, facebook, GOOGLE +, Slack e instagram. | 2024-06-04 A → 2024-05-31 (-4d) | 2024-06-06 A → 2024-06-05 (-1d) |  | 100% → 0% | none → 0d | baseline start none → 2024-05-31; baseline finish none → 2024-06-05 |
| 20 | 5.4. Vista completa front end con integración de back end | 2024-06-06 A → 2024-06-05 (-1d) | 2024-06-12 A → 2024-06-10 (-2d) |  | 100% → 0% | none → 0d | baseline start none → 2024-06-05; baseline finish none → 2024-06-10 |
| 21 | 5.5. Testeo modulo completo | 2024-06-12 A → 2024-06-11 (-1d) | 2024-06-13 A → 2024-06-11 (-2d) |  | 100% → 0% | none → 0d | baseline start none → 2024-06-11; baseline finish none → 2024-06-11 |
| 22 | **6. Módulo Home** | 2024-06-13 A → 2024-06-12 (-1d) | 2024-08-15 → 2024-08-14 (-1d) |  | 11% → 0% |  | baseline start none → 2024-06-12; baseline finish none → 2024-08-14 |
| 23 | 6.1. Concepto UX de diseño | 2024-06-13 A → 2024-06-12 (-1d) | 2024-06-14 A → 2024-06-13 (-1d) |  | 100% → 0% | none → 0d | baseline start none → 2024-06-12; baseline finish none → 2024-06-13 |
| 24 | 6.2. Servicios back end involucrando todas las funcionalidades del concepto de diseño. | 2024-06-14 → 2024-06-13 (-1d) | 2024-08-08 → 2024-08-07 (-1d) |  |  |  | baseline start none → 2024-06-13; baseline finish none → 2024-08-07 |
| 25 | 6.3. Vista front end completa con integración back end. | 2024-08-09 → 2024-08-07 (-2d) | 2024-08-14 → 2024-08-13 (-1d) |  |  |  | baseline start none → 2024-08-07; baseline finish none → 2024-08-13 |
| 26 | 6.4. Testeo modulo completo | 2024-08-14 → 2024-08-13 (-1d) | 2024-08-15 → 2024-08-14 (-1d) |  |  |  | baseline start none → 2024-08-13; baseline finish none → 2024-08-14 |
| 27 | **7. Módulo Ventas** | 2024-06-14 A → 2024-06-13 (-1d) | 2024-08-29 → 2024-08-28 (-1d) |  | 7% → 0% |  | baseline start none → 2024-06-13; baseline finish none → 2024-08-28 |
| 28 | 7.1. Concepto UX de diseño | 2024-06-14 A → 2024-06-13 (-1d) | 2024-06-17 A → 2024-06-14 (-3d) |  | 100% → 0% | none → 70.88d | baseline start none → 2024-06-13; baseline finish none → 2024-06-14 |
| 29 | **7.2. Servicio back end de compras con las integraciones de método de pago:** | 2024-08-15 → 2024-08-14 (-1d) | 2024-08-20 → 2024-08-19 (-1d) |  |  |  | baseline start none → 2024-08-14; baseline finish none → 2024-08-19 |
| 30 | 7.2.1. Transferencia. | 2024-08-15 → 2024-08-14 (-1d) | 2024-08-19 → 2024-08-15 (-4d) |  |  |  | baseline start none → 2024-08-14; baseline finish none → 2024-08-15 |
| 31 | 7.2.2. Mercado pago | 2024-08-15 → 2024-08-14 (-1d) | 2024-08-19 → 2024-08-15 (-4d) |  |  |  | baseline start none → 2024-08-14; baseline finish none → 2024-08-15 |
| 32 | 7.2.3. Crypto | 2024-08-15 → 2024-08-14 (-1d) | 2024-08-19 → 2024-08-16 (-3d) |  |  |  | baseline start none → 2024-08-14; baseline finish none → 2024-08-16 |
| 33 | 7.2.4. Tarjeta de crédito | 2024-08-19 → 2024-08-15 (-4d) | 2024-08-20 → 2024-08-19 (-1d) |  |  |  | baseline start none → 2024-08-15; baseline finish none → 2024-08-19 |
| 34 | 7.2.5. Tarjeta de débito. | 2024-08-19 → 2024-08-15 (-4d) | 2024-08-20 → 2024-08-19 (-1d) |  |  |  | baseline start none → 2024-08-15; baseline finish none → 2024-08-19 |
| 35 | 7.3.Integración de prevención de fraude de tarjeta. | 2024-08-20 → 2024-08-19 (-1d) | 2024-08-22 → 2024-08-21 (-1d) |  |  |  | baseline start none → 2024-08-19; baseline finish none → 2024-08-21 |
| 36 | 7.4. Vista front end completa con integración de back end | 2024-08-20 → 2024-08-19 (-1d) | 2024-08-27 → 2024-08-26 (-1d) |  |  |  | baseline start none → 2024-08-19; baseline finish none → 2024-08-26 |
| 37 | 7.5. Testeo modulo completo | 2024-08-27 → 2024-08-26 (-1d) | 2024-08-29 → 2024-08-28 (-1d) |  |  |  | baseline start none → 2024-08-26; baseline finish none → 2024-08-28 |
| 38 | Reserva contingencia SPRINT 2 | 2024-08-29 → 2024-08-28 (-1d) | 2024-08-29 → 2024-08-28 (-1d) |  |  |  | baseline start none → 2024-08-28; baseline finish none → 2024-08-28 |
| 39 | **Sprint 3** | 2024-06-18 A → 2024-06-14 (-4d) | 2024-09-20 → 2024-09-18 (-2d) |  | 13% → 0% |  | baseline start none → 2024-06-14; baseline finish none → 2024-09-18 |
| 40 | **8. Módulo de Búsqueda y Filtrado** | 2024-06-18 A → 2024-06-14 (-4d) | 2024-09-12 → 2024-09-10 (-2d) |  | 10% → 0% |  | baseline start none → 2024-06-14; baseline finish none → 2024-09-10 |
| 41 | 8.1. Concepto UX de diseño | 2024-06-18 A → 2024-06-14 (-4d) | 2024-06-19 A → 2024-06-17 (-2d) |  | 100% → 0% | none → 70.88d | baseline start none → 2024-06-14; baseline finish none → 2024-06-17 |
| 42 | 8.2. Servicio back end de búsqueda y filtrado contemplando las 15 formas de filtros diferentes incluyendo filtros dinámicos y estáticos. | 2024-08-29 → 2024-08-28 (-1d) | 2024-09-04 → 2024-09-02 (-2d) |  |  |  | baseline start none → 2024-08-28; baseline finish none → 2024-09-02 |
| 43 | 8.3. Concepto UX de integración de Landing page de categorías. | 2024-06-19 → 2024-06-17 (-2d) | 2024-06-21 → 2024-06-19 (-2d) |  |  |  | baseline start none → 2024-06-17; baseline finish none → 2024-06-19 |
| 44 | 8.4. Vista front end completa con integración de back end. | 2024-09-04 → 2024-09-03 (-1d) | 2024-09-11 → 2024-09-09 (-2d) |  |  |  | baseline start none → 2024-09-03; baseline finish none → 2024-09-09 |
| 45 | 8.5. Testeo modulo completo | 2024-09-11 → 2024-09-10 (-1d) | 2024-09-12 → 2024-09-10 (-2d) |  |  |  | baseline start none → 2024-09-10; baseline finish none → 2024-09-10 |
| 46 | **9. Módulo Back Office User.** | 2024-06-19 A → 2024-06-17 (-2d) | 2024-09-20 → 2024-09-18 (-2d) |  | 18% → 0% | 0d → 5.25d | baseline start none → 2024-06-17; baseline finish none → 2024-09-18 |
| 47 | 9.1. Concepto UX diseño. | 2024-06-19 A → 2024-06-17 (-2d) | 2024-06-20 A → 2024-06-18 (-2d) |  | 100% → 0% | none → 70.88d | baseline start none → 2024-06-17; baseline finish none → 2024-06-18 |
| 48 | 9.2. Servicios de back end para la obtención de datos de ventas por usuario. | 2024-09-12 → 2024-09-11 (-1d) | 2024-09-13 → 2024-09-12 (-1d) |  |  |  | baseline start none → 2024-09-11; baseline finish none → 2024-09-12 |
| 49 | 9.3. Vista front end completa con integración de back end. | 2024-09-16 → 2024-09-12 (-4d) | 2024-09-19 → 2024-09-17 (-2d) |  |  |  | baseline start none → 2024-09-12; baseline finish none → 2024-09-17 |
| 50 | 9.4. Testeo modulo completo | 2024-09-19 → 2024-09-17 (-2d) | 2024-09-20 → 2024-09-18 (-2d) |  |  |  | baseline start none → 2024-09-17; baseline finish none → 2024-09-18 |
| 51 | Reserva contingencia SPRINT 3 | 2024-09-20 → 2024-09-18 (-2d) | 2024-09-20 → 2024-09-18 (-2d) |  |  |  | baseline start none → 2024-09-18; baseline finish none → 2024-09-18 |
| 52 | **Sprint 4** | 2024-06-20 A → 2024-06-19 (-1d) | 2024-10-21 → 2024-10-17 (-4d) |  | 13% → 0% |  | baseline start none → 2024-06-19; baseline finish none → 2024-10-17 |
| 53 | **10. Back Office Admin** | 2024-06-20 A → 2024-06-19 (-1d) | 2024-10-02 → 2024-09-30 (-2d) |  | 10% → 0% |  | baseline start none → 2024-06-19; baseline finish none → 2024-09-30 |
| 54 | 10.1. Concepto UX diseño. | 2024-06-20 A → 2024-06-19 (-1d) | 2024-06-21 A → 2024-06-20 (-1d) |  | 100% → 0% | none → 70.88d | baseline start none → 2024-06-19; baseline finish none → 2024-06-20 |
| 55 | **10.2. ABM VENTAS** | 2024-09-20 → 2024-09-18 (-2d) | 2024-09-20 → 2024-09-19 (-1d) |  |  |  | baseline start none → 2024-09-18; baseline finish none → 2024-09-19 |
| 56 | 10.2.1.Insertar venta. | 2024-09-20 → 2024-09-18 (-2d) | 2024-09-20 → 2024-09-19 (-1d) |  |  |  | baseline start none → 2024-09-18; baseline finish none → 2024-09-19 |
| 57 | 10.2.2. Borrar venta. | 2024-09-20 → 2024-09-18 (-2d) | 2024-09-20 → 2024-09-19 (-1d) |  |  |  | baseline start none → 2024-09-18; baseline finish none → 2024-09-19 |
| 58 | 10.2.3. Editar venta. | 2024-09-20 → 2024-09-18 (-2d) | 2024-09-20 → 2024-09-19 (-1d) |  |  |  | baseline start none → 2024-09-18; baseline finish none → 2024-09-19 |
| 59 | 10.2.4. Obtener venta. | 2024-09-20 → 2024-09-18 (-2d) | 2024-09-20 → 2024-09-19 (-1d) |  |  |  | baseline start none → 2024-09-18; baseline finish none → 2024-09-19 |
| 60 | 10.3. Servicios back end para la obtención y filtrado de ventas. | 2024-09-20 → 2024-09-19 (-1d) | 2024-09-25 → 2024-09-23 (-2d) |  |  |  | baseline start none → 2024-09-19; baseline finish none → 2024-09-23 |
| 61 | 10.4. Servicios back end para la obtención de estadísticas. | 2024-09-20 → 2024-09-19 (-1d) | 2024-09-24 → 2024-09-20 (-4d) |  |  |  | baseline start none → 2024-09-19; baseline finish none → 2024-09-20 |
| 62 | 10.5. Vista front end completa con integración de back end. | 2024-09-25 → 2024-09-23 (-2d) | 2024-09-30 → 2024-09-27 (-3d) |  |  |  | baseline start none → 2024-09-23; baseline finish none → 2024-09-27 |
| 63 | 10.6. Testeo modulo completo | 2024-09-30 → 2024-09-27 (-3d) | 2024-10-02 → 2024-09-30 (-2d) |  |  |  | baseline start none → 2024-09-27; baseline finish none → 2024-09-30 |
| 64 | **11. Módulo Producto** | 2024-06-21 A → 2024-06-20 (-1d) | 2024-10-11 → 2024-10-10 (-1d) |  | 15% → 0% |  | baseline start none → 2024-06-20; baseline finish none → 2024-10-10 |
| 65 | 11.1. Concepto UX diseño. | 2024-06-21 A → 2024-06-20 (-1d) | 2024-06-24 A → 2024-06-21 (-3d) |  | 100% → 0% | none → 70.88d | baseline start none → 2024-06-20; baseline finish none → 2024-06-21 |
| 66 | 11.2. Servicios back end para la obtención de datos del producto, cálculo de envio y cálculo de pagos. | 2024-10-02 → 2024-09-30 (-2d) | 2024-10-04 → 2024-10-03 (-1d) |  |  |  | baseline start none → 2024-09-30; baseline finish none → 2024-10-03 |
| 67 | 11.3. Vista front end completa con integración de back end & integración SEO. | 2024-10-04 → 2024-10-03 (-1d) | 2024-10-10 → 2024-10-09 (-1d) |  |  |  | baseline start none → 2024-10-03; baseline finish none → 2024-10-09 |
| 68 | 11.4. Testeo modulo completo | 2024-10-10 → 2024-10-09 (-1d) | 2024-10-11 → 2024-10-10 (-1d) |  |  |  | baseline start none → 2024-10-09; baseline finish none → 2024-10-10 |
| 69 | **12. Modulo Ofertas** | 2024-06-25 A → 2024-06-21 (-4d) | 2024-10-21 → 2024-10-17 (-4d) |  | 15% → 0% |  | baseline start none → 2024-06-21; baseline finish none → 2024-10-17 |
| 70 | 12.1. Concepto UX diseño USER & BACK OFFICE | 2024-06-25 A → 2024-06-21 (-4d) | 2024-06-26 A → 2024-06-24 (-2d) |  | 100% → 0% | none → 70.88d | baseline start none → 2024-06-21; baseline finish none → 2024-06-24 |

| ID | Task | Start | Finish | Duration | Complete | Total float | Other |
| --- | --- | --- | --- | --- | --- | --- | --- |
| 71 | **12.2. ABM Ofertas** | 2024-10-11 → 2024-10-10 (-1d) | 2024-10-11 → 2024-10-10 (-1d) |  |  |  | baseline start none → 2024-10-10; baseline finish none → 2024-10-10 |
| 72 | 12.2.1. Insertar oferta. | 2024-10-11 → 2024-10-10 (-1d) | 2024-10-11 → 2024-10-10 (-1d) |  |  |  | baseline start none → 2024-10-10; baseline finish none → 2024-10-10 |
| 73 | 12.2.2. Editar oferta. | 2024-10-11 → 2024-10-10 (-1d) | 2024-10-11 → 2024-10-10 (-1d) |  |  |  | baseline start none → 2024-10-10; baseline finish none → 2024-10-10 |
| 74 | 12.2.3. Borrar oferta. | 2024-10-11 → 2024-10-10 (-1d) | 2024-10-11 → 2024-10-10 (-1d) |  |  |  | baseline start none → 2024-10-10; baseline finish none → 2024-10-10 |
| 75 | 12.2.4. Obtener oferta. | 2024-10-11 → 2024-10-10 (-1d) | 2024-10-11 → 2024-10-10 (-1d) |  |  |  | baseline start none → 2024-10-10; baseline finish none → 2024-10-10 |
| 76 | 12.3. Servicios back end para la obtención de productos de oferta. | 2024-10-14 → 2024-10-10 (-4d) | 2024-10-14 → 2024-10-11 (-3d) |  |  |  | baseline start none → 2024-10-10; baseline finish none → 2024-10-11 |
| 77 | 12.4. Vista front end completa en back office ADMIN con integración de back end. | 2024-10-14 → 2024-10-11 (-3d) | 2024-10-18 → 2024-10-16 (-2d) |  |  |  | baseline start none → 2024-10-11; baseline finish none → 2024-10-16 |
| 78 | 12.5. Testeo modulo completo | 2024-10-18 → 2024-10-16 (-2d) | 2024-10-21 → 2024-10-17 (-4d) |  |  |  | baseline start none → 2024-10-16; baseline finish none → 2024-10-17 |
| 79 | Reserva contingencia SPRINT 4 | 2024-10-21 → 2024-10-17 (-4d) | 2024-10-21 → 2024-10-17 (-4d) |  |  |  | baseline start none → 2024-10-17; baseline finish none → 2024-10-17 |
| 80 | **Sprint 5** | 2024-05-29 A → 2024-05-29 | 2024-10-29 → 2024-10-25 (-4d) | 108.75d → 107.25d | 16% → 0% |  | baseline start none → 2024-05-29; baseline finish none → 2024-10-25 |
| 81 | **13. Módulo notificaciones** | 2024-06-26 A → 2024-06-24 (-2d) | 2024-10-29 → 2024-10-25 (-4d) |  | 12% → 0% |  | baseline start none → 2024-06-24; baseline finish none → 2024-10-25 |
| 82 | 13.1. Concepto UX diseño USER & BACK OFFICE | 2024-06-26 A → 2024-06-24 (-2d) | 2024-06-27 A → 2024-06-25 (-2d) |  | 100% → 0% | none → 70.88d | baseline start none → 2024-06-24; baseline finish none → 2024-06-25 |
| 83 | **13.2. ABM NOTIFICACIONES** | 2024-10-21 → 2024-10-17 (-4d) | 2024-10-22 → 2024-10-18 (-4d) | 1.38d → 1d |  |  | baseline start none → 2024-10-17; baseline finish none → 2024-10-18 |
| 84 | 13.2.1. Insertar notificaciones. | 2024-10-21 → 2024-10-18 (-3d) | 2024-10-22 → 2024-10-18 (-4d) |  |  | 4.5d → 4.88d | baseline start none → 2024-10-18; baseline finish none → 2024-10-18 |
| 85 | 13.2.2. Editar notificaciones. | 2024-10-21 → 2024-10-17 (-4d) | 2024-10-21 → 2024-10-18 (-3d) |  |  |  | baseline start none → 2024-10-17; baseline finish none → 2024-10-18 |
| 86 | 13.2.3. Borrar notificaciones. | 2024-10-21 → 2024-10-17 (-4d) | 2024-10-21 → 2024-10-18 (-3d) |  |  |  | baseline start none → 2024-10-17; baseline finish none → 2024-10-18 |
| 87 | 13.2.4. Obtener notificaciones. | 2024-10-21 → 2024-10-17 (-4d) | 2024-10-21 → 2024-10-18 (-3d) |  |  |  | baseline start none → 2024-10-17; baseline finish none → 2024-10-18 |
| 88 | 13.3. Servicios back end para la inserción masiva de notificaciones. | 2024-10-21 → 2024-10-18 (-3d) | 2024-10-23 → 2024-10-21 (-2d) |  |  |  | baseline start none → 2024-10-18; baseline finish none → 2024-10-21 |
| 89 | 13.4. Servicios back end para la obtención de notificaciones del usuario. | 2024-10-21 → 2024-10-18 (-3d) | 2024-10-22 → 2024-10-18 (-4d) |  |  |  | baseline start none → 2024-10-18; baseline finish none → 2024-10-18 |
| 90 | 13.5. Vista front end dentro de back office admin completa con integración de back end. | 2024-10-22 → 2024-10-21 (-1d) | 2024-10-28 → 2024-10-24 (-4d) |  |  |  | baseline start none → 2024-10-21; baseline finish none → 2024-10-24 |
| 91 | 13.6. Testeo modulo completo | 2024-10-28 → 2024-10-24 (-4d) | 2024-10-29 → 2024-10-25 (-4d) |  |  |  | baseline start none → 2024-10-24; baseline finish none → 2024-10-25 |
| 92 | **14. Módulo Mailing** | 2024-05-29 A → 2024-05-29 | 2024-08-30 → 2024-08-29 (-1d) | 67.25d → 65.75d | 17% → 0% |  | baseline start none → 2024-05-29; baseline finish none → 2024-08-29 |
| 93 | 14.1. Configuración de servidor de correos. |  |  |  |  | 93.12d → 91.62d | baseline start none → 2024-05-29; baseline finish none → 2024-05-30 |
| 94 | 14.2. Cumplimiento de políticas de seguridad y de contenido para el envio de correos sin entrar en black list. | 2024-08-22 → 2024-08-21 (-1d) | 2024-08-30 → 2024-08-29 (-1d) |  |  |  | baseline start none → 2024-08-21; baseline finish none → 2024-08-29 |
| 95 | 14.3. Diseño UX para cada prototipo de correo de Marketing. | 2024-06-27 A → 2024-06-26 (-1d) | 2024-07-01 A → 2024-06-28 (-3d) |  | 100% → 0% | none → 70.88d | baseline start none → 2024-06-26; baseline finish none → 2024-06-28 |
| 96 | 14.4. Diseño UX para cada correo por venta realizada, cambios de estado de venta, de pago y de envio. | 2024-07-02 A → 2024-06-28 (-4d) | 2024-07-04 A → 2024-07-02 (-2d) |  | 100% → 0% | none → 70.88d | baseline start none → 2024-06-28; baseline finish none → 2024-07-02 |
| 97 | 14.5. Servicios back end para la creación de correos por Carrito abandonado. | 2024-07-04 → 2024-07-03 (-1d) | 2024-07-08 → 2024-07-05 (-3d) |  |  |  | baseline start none → 2024-07-03; baseline finish none → 2024-07-05 |
| 98 | 14.6. Servicios back end para la creación de correos por descuentos. |  |  |  |  | 93.12d → 91.62d | baseline start none → 2024-05-30; baseline finish none → 2024-06-04 |
| 99 | 14.7. Servicios back end para la creación de correos por ofertas. |  |  |  |  | 93.12d → 91.62d | baseline start none → 2024-06-04; baseline finish none → 2024-06-06 |
| 100 | 14.8. Servicios back end para la creación de correos por noticias propias | 2024-07-09 → 2024-07-05 (-4d) | 2024-07-11 → 2024-07-09 (-2d) |  |  |  | baseline start none → 2024-07-05; baseline finish none → 2024-07-09 |
| 101 | 14.9. Servicios back end con la integración de envío de correos por creación de venta o cambio de estado. | 2024-07-11 → 2024-07-10 (-1d) | 2024-07-15 → 2024-07-12 (-3d) |  |  |  | baseline start none → 2024-07-10; baseline finish none → 2024-07-12 |
| 102 | 14.10. Vista front dentro de back office admin completa con integración de back end | 2024-07-16 → 2024-07-12 (-4d) | 2024-07-22 → 2024-07-18 (-4d) |  |  |  | baseline start none → 2024-07-12; baseline finish none → 2024-07-18 |
| 103 | Reserva contingencia SPRINT 5 | 2024-07-22 → 2024-07-18 (-4d) | 2024-07-22 → 2024-07-18 (-4d) |  |  |  | baseline start none → 2024-07-18; baseline finish none → 2024-07-18 |
| 104 | **Sprint 6** | 2024-08-15 → 2024-08-14 (-1d) | 2024-10-14 → 2024-10-11 (-3d) |  |  |  | baseline start none → 2024-08-14; baseline finish none → 2024-10-11 |
| 105 | **4. Análisis de SEO** | 2024-08-15 → 2024-08-14 (-1d) | 2024-10-14 → 2024-10-11 (-3d) |  |  |  | baseline start none → 2024-08-14; baseline finish none → 2024-10-11 |
| 106 | **4.1. Análisis estructural de posicionamiento orgánico de las vistas.** | 2024-08-15 → 2024-08-14 (-1d) | 2024-10-14 → 2024-10-11 (-3d) |  |  |  | baseline start none → 2024-08-14; baseline finish none → 2024-10-11 |
| 107 | 4.1.1. Home. | 2024-08-15 → 2024-08-14 (-1d) | 2024-08-16 → 2024-08-15 (-1d) |  |  |  | baseline start none → 2024-08-14; baseline finish none → 2024-08-15 |
| 108 | 4.1.2. Producto. | 2024-10-11 → 2024-10-10 (-1d) | 2024-10-14 → 2024-10-11 (-3d) |  |  |  | baseline start none → 2024-10-10; baseline finish none → 2024-10-11 |
| 109 | 4.1.3. Búsqueda y filtrado. | 2024-09-12 → 2024-09-11 (-1d) | 2024-09-13 → 2024-09-12 (-1d) |  |  |  | baseline start none → 2024-09-11; baseline finish none → 2024-09-12 |
| 110 | 4.1.4. Landing page categorías. | 2024-09-13 → 2024-09-12 (-1d) | 2024-09-16 → 2024-09-13 (-3d) |  |  |  | baseline start none → 2024-09-12; baseline finish none → 2024-09-13 |
| 111 | 4.1.5. Landing page marcas. | 2024-09-17 → 2024-09-13 (-4d) | 2024-09-18 → 2024-09-16 (-2d) |  |  |  | baseline start none → 2024-09-13; baseline finish none → 2024-09-16 |
| 112 | Reserva contingencia SPRINT 6 | 2024-09-18 → 2024-09-16 (-2d) | 2024-09-18 → 2024-09-16 (-2d) |  |  |  | baseline start none → 2024-09-16; baseline finish none → 2024-09-16 |
